# Отчет движение денежных средств

How a schedule from MS Project changed from version to version. A marks actual dates.

## Version 1 (data date 2010-10-01, saved 2022-10-21, file Отчет движение денежных средств.mpp)

Note of the change: Рефакторинг

| ID | WBS | Task | Duration | Start | Finish | Predecessors | Complete | Total float | Constraint |
| --- | --- | --- | --- | --- | --- | --- | --- | --- | --- |
| 1 |  | Начало проекта | 0d | 2010-10-01 A | 2010-10-01 A |  | 100% |  | start no earlier than 2010-10-01 |
| 2 | 2 | **Выбор системы** | 16d | 2010-10-01 A | 2010-10-22 |  | 9% | 16d |  |
| 3 |  | Изучение рынка бухгалтерских систем | 7d | 2010-10-01 A | 2010-10-11 | 1 | 14% | 16d |  |
| 4 |  | Составление требований к бухгалтерским системам | 7d | 2010-10-01 A | 2010-10-11 | 1 | 14% | 16d |  |
| 5 |  | Консультации с фирмами-разработчиками | 7d | 2010-10-12 | 2010-10-20 | 3, 4 |  | 16d |  |
| 6 |  | Принятие окончательного решения | 2d | 2010-10-21 | 2010-10-22 | 5 |  | 16d |  |
| 7 |  | Выбор завершен | 0d | 2010-10-22 | 2010-10-22 | 6 |  | 16d |  |
| 8 | 3 | **Приобретение программного обеспечения** | 16d | 2010-10-22 | 2010-11-15 |  |  | 176d |  |
| 9 |  | Заключение договоров | 6d | 2010-10-22 | 2010-11-01 | 7 |  | 176d |  |
| 10 |  | Оплата за ПО | 2d | 2010-11-02 | 2010-11-03 | 9 |  | 176d |  |
| 11 |  | Оформление ПО на баланс | 3d | 2010-11-11 | 2010-11-15 | 10FS+5d |  | 176d |  |
| 12 |  | Приобретение ПО завершено | 0d | 2010-11-15 | 2010-11-15 | 11 |  | 176d |  |
| 13 | 4 | **Составление проекта сети** | 12d | 2010-10-25 | 2010-11-09 |  |  | 23d |  |
| 14 |  | Разработка архитектуры сети | 7d | 2010-10-25 | 2010-11-02 | 7 |  | 23d |  |
| 15 |  | Проработка физического размещения сети | 5d | 2010-11-02 | 2010-11-09 | 14 |  | 168d |  |
| 16 |  | Проект сети завершен | 0d | 2010-11-09 | 2010-11-09 | 15 |  | 168d |  |
| 17 | 5 | **Приобретение компьютеров и сетевого оборудования** | 27d | 2010-11-03 | 2010-12-09 |  |  | 16d |  |
| 18 |  | Сбор информации о поставщиках и предложениях | 7d | 2010-11-03 | 2010-11-11 | 7 |  | 16d |  |
| 19 |  | Анализ и выбор поставщика | 5d | 2010-11-12 | 2010-11-18 | 14, 18 |  | 16d |  |
| 20 |  | Заключение договоров | 5d | 2010-11-19 | 2010-11-25 | 19 |  | 16d |  |
| 21 |  | Оплата за оборудование | 2d | 2010-11-26 | 2010-11-29 | 20 |  | 16d |  |
| 22 |  | Оформление оборудования на баланс | 3d | 2010-12-07 | 2010-12-09 | 21FS+5d |  | 16d |  |
| 23 |  | Приобретение оборудования завершено | 0d | 2010-12-09 | 2010-12-09 | 22 |  | 16d |  |
| 24 | 6 | **Обучение администратора и программиста** | 29d | 2010-11-16 | 2010-12-24 |  |  | 168d |  |
| 25 |  | Курсы администраторов | 18d | 2010-11-26 | 2010-12-21 | 16 |  | 168d |  |
| 26 |  | Курсы программистов | 18d | 2010-11-16 | 2010-12-09 | 12 |  | 176d |  |
| 27 |  | Сдача сертификационных экзаменов | 3d | 2010-12-22 | 2010-12-24 | 25, 26 |  | 168d |  |
| 28 |  | Обучение завершено | 0d | 2010-12-24 | 2010-12-24 | 27 |  | 168d |  |
| 29 | 7 | **Монтаж локальной сети** | 28d | 2010-12-10 | 2011-01-18 |  |  | 16d |  |
| 30 |  | Установка компьютеров на рабочих местах | 3d | 2011-01-07 | 2011-01-11 | 23 |  | 16d |  |
| 31 |  | Монтаж кабеля | 10d | 2010-12-10 | 2010-12-23 | 23 |  | 29d |  |
| 32 |  | Монтаж сетевых устройств | 10d | 2010-12-24 | 2011-01-06 | 23 |  | 19d |  |
| 33 |  | Подключение кабеля к компьютерам и сетевым устройствам | 5d | 2011-01-12 | 2011-01-18 | 30, 31, 32 |  | 16d |  |
| 34 |  | Монтаж завершен | 0d | 2011-01-18 | 2011-01-18 | 33 |  | 16d |  |
| 35 | 8 | **Установка ПО на компьютеры** | 17d | 2011-01-19 | 2011-02-10 |  |  | 16d |  |
| 36 |  | Установка сервера | 5d | 2011-01-19 | 2011-01-25 | 34 |  | 16d |  |
| 37 |  | Создание доменов и пользователей | 7d | 2011-01-26 | 2011-02-03 | 36 |  | 16d |  |
| 38 |  | Проверка и настройка работы сети | 5d | 2011-02-04 | 2011-02-10 | 37 |  | 16d |  |
| 39 |  | Настройка сети завершена | 0d | 2011-02-10 | 2011-02-10 | 38 |  | 16d |  |
| 40 | 9 | **Ввод начальных данных** | 96d | 2011-02-11 | 2011-06-24 |  |  | 16d |  |
| 41 |  | Ввод справочников | 40d | 2011-02-11 | 2011-04-07 | 39 |  | 16d |  |
| 42 |  | Ввод начальных остатков | 40d | 2011-05-02 | 2011-06-24 | 41 |  | 0d | start no earlier than 2011-05-01 |
| 43 |  | Ввод начальных данных завершен | 0d | 2011-06-24 | 2011-06-24 | 42 |  | 38d |  |
| 44 | 10 | **Обучение персонала** | 126d | 2011-02-10 | 2011-08-05 |  |  | 0d |  |
| 45 |  | Принципы работы системы | 3d | 2011-02-10 | 2011-02-15 | 39 |  | 68d |  |
| 46 |  | Изучение интерфейса | 5d | 2011-02-15 | 2011-02-22 | 45 |  | 68d |  |
| 47 |  | Изучение справочников | 20d | 2011-02-22 | 2011-03-22 | 41SS+5d, 46 |  | 68d |  |
| 48 |  | Изучение документов и журналов | 30d | 2011-06-27 | 2011-08-05 | 42, 47 |  | 0d |  |
| 49 |  | Обучение завершено | 0d | 2011-08-05 | 2011-08-05 | 48 |  | 0d |  |
| 50 | 11 | **Передача в эксплуатацию** | 8d | 2011-08-08 | 2011-08-17 |  |  | 0d |  |
| 51 |  | Формирование тестовой отчетности | 5d | 2011-08-08 | 2011-08-12 | 49 |  | 0d |  |
| 52 |  | Акт ввода в эксплуатацию | 3d | 2011-08-15 | 2011-08-17 | 51 |  | 0d |  |
| 53 |  | Передача в эксплуатацию завершена | 0d | 2011-08-17 | 2011-08-17 | 52 |  | 0d |  |
| 54 |  | Конец проекта | 0d | 2011-08-17 | 2011-08-17 | 53 |  | 0d |  |

## Version 2 (data date 2011-08-17, saved 2022-10-21, file Бух7_Отчет1 Отчет обзор проекта.mpp)

Note of the change: Рефакторинг

Last finish stays 2011-08-17. Complete tasks 1 → 32.

Changed:

| ID | Task | Start | Finish | Complete | Total float |
| --- | --- | --- | --- | --- | --- |
| 2 | **Выбор системы** |  |  | 9% → 99% | 16d → 213d |
| 3 | Изучение рынка бухгалтерских систем |  |  | 14% → 99% | 16d → 7d |
| 4 | Составление требований к бухгалтерским системам |  |  | 14% → 99% | 16d → 7d |
| 5 | Консультации с фирмами-разработчиками | 2010-10-12 A |  | 0% → 99% | 16d → 215d |
| 6 | Принятие окончательного решения | 2010-10-21 A | 2010-10-22 A | 0% → 100% | 16d → none |
| 7 | Выбор завершен | 2010-10-22 A | 2010-10-22 A | 0% → 100% | 16d → none |
| 8 | **Приобретение программного обеспечения** | 2010-10-22 A |  | 0% → 99% | 176d → 197d |
| 9 | Заключение договоров | 2010-10-22 A |  | 0% → 99% | 176d → 207d |
| 10 | Оплата за ПО | 2010-11-02 A | 2010-11-03 A | 0% → 100% | 176d → none |
| 11 | Оформление ПО на баланс | 2010-11-11 A | 2010-11-15 A | 0% → 100% | 176d → none |
| 12 | Приобретение ПО завершено | 2010-11-15 A | 2010-11-15 A | 0% → 100% | 176d → none |
| 13 | **Составление проекта сети** | 2010-10-25 A |  | 0% → 99% | 23d → 201d |
| 14 | Разработка архитектуры сети | 2010-10-25 A | 2010-11-02 A | 0% → 100% | 23d → none |
| 15 | Проработка физического размещения сети | 2010-11-02 A |  | 0% → 99% | 168d → 201d |
| 16 | Проект сети завершен | 2010-11-09 A | 2010-11-09 A | 0% → 100% | 168d → none |
| 17 | **Приобретение компьютеров и сетевого оборудования** | 2010-11-03 A |  | 0% → 99% | 16d → 179d |
| 18 | Сбор информации о поставщиках и предложениях | 2010-11-03 A |  | 0% → 99% | 16d → 0d |
| 19 | Анализ и выбор поставщика | 2010-11-12 A |  | 0% → 99% | 16d → 194d |
| 20 | Заключение договоров | 2010-11-19 A | 2010-11-25 A | 0% → 100% | 16d → none |
| 21 | Оплата за оборудование | 2010-11-26 A | 2010-11-29 A | 0% → 100% | 16d → none |
| 22 | Оформление оборудования на баланс | 2010-12-07 A | 2010-12-09 A | 0% → 100% | 16d → none |
| 23 | Приобретение оборудования завершено | 2010-12-09 A | 2010-12-09 A | 0% → 100% | 16d → none |
| 24 | **Обучение администратора и программиста** | 2010-11-16 A |  | 0% → 99% |  |
| 25 | Курсы администраторов | 2010-11-26 A |  | 0% → 99% | 168d → 171d |
| 26 | Курсы программистов | 2010-11-16 A |  | 0% → 99% | 176d → 179d |
| 27 | Сдача сертификационных экзаменов | 2010-12-22 A | 2010-12-24 A | 0% → 100% | 168d → none |
| 28 | Обучение завершено | 2010-12-24 A | 2010-12-24 A | 0% → 100% | 168d → none |
| 29 | **Монтаж локальной сети** | 2010-12-10 A | 2011-01-18 A | 0% → 100% | 16d → none |
| 30 | Установка компьютеров на рабочих местах | 2011-01-07 A | 2011-01-11 A | 0% → 100% | 16d → none |
| 31 | Монтаж кабеля | 2010-12-10 A | 2010-12-23 A | 0% → 100% | 29d → none |
| 32 | Монтаж сетевых устройств | 2010-12-24 A | 2011-01-06 A | 0% → 100% | 19d → none |
| 33 | Подключение кабеля к компьютерам и сетевым устройствам | 2011-01-12 A | 2011-01-18 A | 0% → 100% | 16d → none |
| 34 | Монтаж завершен | 2011-01-18 A | 2011-01-18 A | 0% → 100% | 16d → none |
| 35 | **Установка ПО на компьютеры** | 2011-01-19 A | 2011-02-10 A | 0% → 100% | 16d → none |
| 36 | Установка сервера | 2011-01-19 A | 2011-01-25 A | 0% → 100% | 16d → none |
| 37 | Создание доменов и пользователей | 2011-01-26 A | 2011-02-03 A | 0% → 100% | 16d → none |
| 38 | Проверка и настройка работы сети | 2011-02-04 A | 2011-02-10 A | 0% → 100% | 16d → none |
| 39 | Настройка сети завершена | 2011-02-10 A | 2011-02-10 A | 0% → 100% | 16d → none |
| 40 | **Ввод начальных данных** | 2011-02-11 A | 2011-06-24 A | 0% → 100% | 16d → none |
| 41 | Ввод справочников | 2011-02-11 A | 2011-04-07 A | 0% → 100% | 16d → none |
| 42 | Ввод начальных остатков | 2011-05-02 A | 2011-06-24 A | 0% → 100% | 0d → none |
| 43 | Ввод начальных данных завершен | 2011-06-24 A | 2011-06-24 A | 0% → 100% | 38d → none |
| 44 | **Обучение персонала** | 2011-02-10 A |  | 0% → 99% | 0d → 8d |
| 45 | Принципы работы системы | 2011-02-10 A |  | 0% → 99% | 68d → 5d |
| 46 | Изучение интерфейса | 2011-02-15 A |  | 0% → 99% | 68d → 20d |
| 47 | Изучение справочников | 2011-02-22 A |  | 0% → 99% | 68d → 106d |
| 48 | Изучение документов и журналов | 2011-06-27 A | 2011-08-05 A | 0% → 100% | 0d → none |
| 49 | Обучение завершено | 2011-08-05 A | 2011-08-05 A | 0% → 100% | 0d → none |
| 50 | **Передача в эксплуатацию** | 2011-08-08 A | 2011-08-17 A | 0% → 100% | 0d → none |
| 51 | Формирование тестовой отчетности | 2011-08-08 A | 2011-08-12 A | 0% → 100% | 0d → none |
| 52 | Акт ввода в эксплуатацию | 2011-08-15 A | 2011-08-17 A | 0% → 100% | 0d → none |
| 53 | Передача в эксплуатацию завершена | 2011-08-17 A | 2011-08-17 A | 0% → 100% | 0d → none |
| 54 | Конец проекта | 2011-08-17 A | 2011-08-17 A | 0% → 100% | 0d → none |

## Version 3 (data date 2022-10-21, saved 2022-10-21, file Отчеты.mpp)

Note of the change: Рефакторинг

Last finish stays 2011-08-17.

Changed:

| ID | Task | Other |
| --- | --- | --- |
| 1 | Начало проекта | baseline start 2010-10-01 → none; baseline finish 2010-10-01 → none |
| 2 | **Выбор системы** | baseline start 2010-10-01 → none; baseline finish 2010-10-22 → none |
| 3 | Изучение рынка бухгалтерских систем | baseline start 2010-10-01 → none; baseline finish 2010-10-11 → none |
| 4 | Составление требований к бухгалтерским системам | baseline start 2010-10-01 → none; baseline finish 2010-10-11 → none |
| 5 | Консультации с фирмами-разработчиками | baseline start 2010-10-12 → none; baseline finish 2010-10-20 → none |
| 6 | Принятие окончательного решения | baseline start 2010-10-21 → none; baseline finish 2010-10-22 → none |
| 7 | Выбор завершен | baseline start 2010-10-22 → none; baseline finish 2010-10-22 → none |
| 8 | **Приобретение программного обеспечения** | baseline start 2010-10-22 → none; baseline finish 2010-11-15 → none |
| 9 | Заключение договоров | baseline start 2010-10-22 → none; baseline finish 2010-11-01 → none |
| 10 | Оплата за ПО | baseline start 2010-11-02 → none; baseline finish 2010-11-03 → none |
| 11 | Оформление ПО на баланс | baseline start 2010-11-11 → none; baseline finish 2010-11-15 → none |
| 12 | Приобретение ПО завершено | baseline start 2010-11-15 → none; baseline finish 2010-11-15 → none |
| 13 | **Составление проекта сети** | baseline start 2010-10-25 → none; baseline finish 2010-11-09 → none |
| 14 | Разработка архитектуры сети | baseline start 2010-10-25 → none; baseline finish 2010-11-02 → none |
| 15 | Проработка физического размещения сети | baseline start 2010-11-02 → none; baseline finish 2010-11-09 → none |
| 16 | Проект сети завершен | baseline start 2010-11-09 → none; baseline finish 2010-11-09 → none |
| 17 | **Приобретение компьютеров и сетевого оборудования** | baseline start 2010-11-03 → none; baseline finish 2010-12-09 → none |
| 18 | Сбор информации о поставщиках и предложениях | baseline start 2010-11-03 → none; baseline finish 2010-11-11 → none |
| 19 | Анализ и выбор поставщика | baseline start 2010-11-12 → none; baseline finish 2010-11-18 → none |
| 20 | Заключение договоров | baseline start 2010-11-19 → none; baseline finish 2010-11-25 → none |
| 21 | Оплата за оборудование | baseline start 2010-11-26 → none; baseline finish 2010-11-29 → none |
| 22 | Оформление оборудования на баланс | baseline start 2010-12-07 → none; baseline finish 2010-12-09 → none |
| 23 | Приобретение оборудования завершено | baseline start 2010-12-09 → none; baseline finish 2010-12-09 → none |
| 24 | **Обучение администратора и программиста** | baseline start 2010-11-16 → none; baseline finish 2010-12-24 → none |
| 25 | Курсы администраторов | baseline start 2010-11-26 → none; baseline finish 2010-12-21 → none |
| 26 | Курсы программистов | baseline start 2010-11-16 → none; baseline finish 2010-12-09 → none |
| 27 | Сдача сертификационных экзаменов | baseline start 2010-12-22 → none; baseline finish 2010-12-24 → none |
| 28 | Обучение завершено | baseline start 2010-12-24 → none; baseline finish 2010-12-24 → none |
| 29 | **Монтаж локальной сети** | baseline start 2010-12-10 → none; baseline finish 2011-01-18 → none |
| 30 | Установка компьютеров на рабочих местах | baseline start 2011-01-07 → none; baseline finish 2011-01-11 → none |
| 31 | Монтаж кабеля | baseline start 2010-12-10 → none; baseline finish 2010-12-23 → none |
| 32 | Монтаж сетевых устройств | baseline start 2010-12-24 → none; baseline finish 2011-01-06 → none |
| 33 | Подключение кабеля к компьютерам и сетевым устройствам | baseline start 2011-01-12 → none; baseline finish 2011-01-18 → none |
| 34 | Монтаж завершен | baseline start 2011-01-18 → none; baseline finish 2011-01-18 → none |
| 35 | **Установка ПО на компьютеры** | baseline start 2011-01-19 → none; baseline finish 2011-02-10 → none |
| 36 | Установка сервера | baseline start 2011-01-19 → none; baseline finish 2011-01-25 → none |
| 37 | Создание доменов и пользователей | baseline start 2011-01-26 → none; baseline finish 2011-02-03 → none |
| 38 | Проверка и настройка работы сети | baseline start 2011-02-04 → none; baseline finish 2011-02-10 → none |
| 39 | Настройка сети завершена | baseline start 2011-02-10 → none; baseline finish 2011-02-10 → none |
| 40 | **Ввод начальных данных** | baseline start 2011-02-11 → none; baseline finish 2011-06-24 → none |
| 41 | Ввод справочников | baseline start 2011-02-11 → none; baseline finish 2011-04-07 → none |
| 42 | Ввод начальных остатков | baseline start 2011-05-02 → none; baseline finish 2011-06-24 → none |
| 43 | Ввод начальных данных завершен | baseline start 2011-06-24 → none; baseline finish 2011-06-24 → none |
| 44 | **Обучение персонала** | baseline start 2011-02-10 → none; baseline finish 2011-08-05 → none |
| 45 | Принципы работы системы | baseline start 2011-02-10 → none; baseline finish 2011-02-15 → none |
| 46 | Изучение интерфейса | baseline start 2011-02-15 → none; baseline finish 2011-02-22 → none |
| 47 | Изучение справочников | baseline start 2011-02-22 → none; baseline finish 2011-03-22 → none |
| 48 | Изучение документов и журналов | baseline start 2011-06-27 → none; baseline finish 2011-08-05 → none |
| 49 | Обучение завершено | baseline start 2011-08-05 → none; baseline finish 2011-08-05 → none |
| 50 | **Передача в эксплуатацию** | baseline start 2011-08-08 → none; baseline finish 2011-08-17 → none |
| 51 | Формирование тестовой отчетности | baseline start 2011-08-08 → none; baseline finish 2011-08-12 → none |
| 52 | Акт ввода в эксплуатацию | baseline start 2011-08-15 → none; baseline finish 2011-08-17 → none |
| 53 | Передача в эксплуатацию завершена | baseline start 2011-08-17 → none; baseline finish 2011-08-17 → none |
| 54 | Конец проекта | baseline start 2011-08-17 → none; baseline finish 2011-08-17 → none |
