# Бух2_1

How a schedule from MS Project changed from version to version. A marks actual dates.

## Version 1 (saved 2022-10-20, file Бух2_1.mpp)

Note of the change: Лабораторные работы 1-5

| ID | WBS | Task | Duration | Start | Finish | Predecessors | Total float | Constraint |
| --- | --- | --- | --- | --- | --- | --- | --- | --- |
| 1 |  | Начало проекта | 0d | 2010-10-01 | 2010-10-01 |  | 36d | start no earlier than 2010-10-01 |
| 2 | 2 | **Выбор системы** | 16d | 2010-10-01 | 2010-10-22 |  | 36d |  |
| 3 |  | Изучение рынка бухгалтерских систем | 7d | 2010-10-01 | 2010-10-11 | 1 | 36d |  |
| 4 |  | Составление требований к бухгалтерским системам | 7d | 2010-10-01 | 2010-10-11 | 1 | 36d |  |
| 5 |  | Консультации с фирмами-разработчиками | 7d | 2010-10-12 | 2010-10-20 | 3, 4 | 36d |  |
| 6 |  | Принятие окончательного решения | 2d | 2010-10-21 | 2010-10-22 | 5 | 36d |  |
| 7 |  | Выбор завершен | 0d | 2010-10-22 | 2010-10-22 | 6 | 36d |  |
| 8 | 3 | **Приобретение программного обеспечения** | 16d | 2010-10-25 | 2010-11-15 |  | 176d |  |
| 9 |  | Заключение договоров | 6d | 2010-10-25 | 2010-11-01 | 7 | 176d |  |
| 10 |  | Оплата за ПО | 2d | 2010-11-02 | 2010-11-03 | 9 | 176d |  |
| 11 |  | Оформление ПО на баланс | 3d | 2010-11-11 | 2010-11-15 | 10FS+5d | 176d |  |
| 12 |  | Приобретение ПО завершено | 0d | 2010-11-15 | 2010-11-15 | 11 | 176d |  |
| 13 | 4 | **Составление проекта сети** | 12d | 2010-10-25 | 2010-11-09 |  | 36d |  |
| 14 |  | Разработка архитектуры сети | 7d | 2010-10-25 | 2010-11-02 | 7 | 36d |  |
| 15 |  | Проработка физического размещения сети | 5d | 2010-11-03 | 2010-11-09 | 14 | 180d |  |
| 16 |  | Проект сети завершен | 0d | 2010-11-09 | 2010-11-09 | 15 | 180d |  |
| 17 | 5 | **Приобретение компьютеров и сетевого оборудования** | 27d | 2010-10-25 | 2010-11-30 |  | 36d |  |
| 18 |  | Сбор информации о поставщиках и предложениях | 7d | 2010-10-25 | 2010-11-02 | 7 | 36d |  |
| 19 |  | Анализ и выбор поставщика | 5d | 2010-11-03 | 2010-11-09 | 14, 18 | 36d |  |
| 20 |  | Заключение договоров | 5d | 2010-11-10 | 2010-11-16 | 19 | 36d |  |
| 21 |  | Оплата за оборудование | 2d | 2010-11-17 | 2010-11-18 | 20 | 36d |  |
| 22 |  | Оформление оборудования на баланс | 3d | 2010-11-26 | 2010-11-30 | 21FS+5d | 36d |  |
| 23 |  | Приобретение оборудования завершено | 0d | 2010-11-30 | 2010-11-30 | 22 | 36d |  |
| 24 | 6 | **Обучение администратора и программиста** | 25d | 2010-11-10 | 2010-12-14 |  | 176d |  |
| 25 |  | Курсы администраторов | 18d | 2010-11-10 | 2010-12-03 | 16 | 180d |  |
| 26 |  | Курсы программистов | 18d | 2010-11-16 | 2010-12-09 | 12 | 176d |  |
| 27 |  | Сдача сертификационных экзаменов | 3d | 2010-12-10 | 2010-12-14 | 25, 26 | 176d |  |
| 28 |  | Обучение завершено | 0d | 2010-12-14 | 2010-12-14 | 27 | 176d |  |
| 29 | 7 | **Монтаж локальной сети** | 15d | 2010-12-01 | 2010-12-21 |  | 36d |  |
| 30 |  | Установка компьютеров на рабочих местах | 3d | 2010-12-01 | 2010-12-03 | 23 | 43d |  |
| 31 |  | Монтаж кабеля | 10d | 2010-12-01 | 2010-12-14 | 23 | 36d |  |
| 32 |  | Монтаж сетевых устройств | 10d | 2010-12-01 | 2010-12-14 | 23 | 36d |  |
| 33 |  | Подключение кабеля к компьютерам и сетевым устройствам | 5d | 2010-12-15 | 2010-12-21 | 30, 31, 32 | 36d |  |
| 34 |  | Монтаж завершен | 0d | 2010-12-21 | 2010-12-21 | 33 | 36d |  |
| 35 | 8 | **Установка ПО на компьютеры** | 17d | 2010-12-22 | 2011-01-13 |  | 36d |  |
| 36 |  | Установка сервера | 5d | 2010-12-22 | 2010-12-28 | 34 | 36d |  |
| 37 |  | Создание доменов и пользователей | 7d | 2010-12-29 | 2011-01-06 | 36 | 36d |  |
| 38 |  | Проверка и настройка работы сети | 5d | 2011-01-07 | 2011-01-13 | 37 | 36d |  |
| 39 |  | Настройка сети завершена | 0d | 2011-01-13 | 2011-01-13 | 38 | 36d |  |
| 40 | 9 | **Ввод начальных данных** | 116d | 2011-01-14 | 2011-06-24 |  | 36d |  |
| 41 |  | Ввод справочников | 40d | 2011-01-14 | 2011-03-10 | 39 | 36d |  |
| 42 |  | Ввод начальных остатков | 40d | 2011-05-02 | 2011-06-24 | 41 | 0d | start no earlier than 2011-05-01 |
| 43 |  | Ввод начальных данных завершен | 0d | 2011-06-24 | 2011-06-24 | 42 | 38d |  |
| 44 | 10 | **Обучение персонала** | 146d | 2011-01-14 | 2011-08-05 |  | 0d |  |
| 45 |  | Принципы работы системы | 3d | 2011-01-14 | 2011-01-18 | 39 | 88d |  |
| 46 |  | Изучение интерфейса | 5d | 2011-01-19 | 2011-01-25 | 45 | 88d |  |
| 47 |  | Изучение справочников | 20d | 2011-01-26 | 2011-02-22 | 41SS+5d, 46 | 88d |  |
| 48 |  | Изучение документов и журналов | 30d | 2011-06-27 | 2011-08-05 | 42, 47 | 0d |  |
| 49 |  | Обучение завершено | 0d | 2011-08-05 | 2011-08-05 | 48 | 0d |  |
| 50 | 11 | **Передача в эксплуатацию** | 8d | 2011-08-08 | 2011-08-17 |  | 0d |  |
| 51 |  | Формирование тестовой отчетности | 5d | 2011-08-08 | 2011-08-12 | 49 | 0d |  |
| 52 |  | Акт ввода в эксплуатацию | 3d | 2011-08-15 | 2011-08-17 | 51 | 0d |  |
| 53 |  | Передача в эксплуатацию завершена | 0d | 2011-08-17 | 2011-08-17 | 52 | 0d |  |
| 54 |  | Конец проекта | 0d | 2011-08-17 | 2011-08-17 | 53 | 0d |  |

## Version 2 (saved 2022-10-20, file Бух4_АнализКрит.mpp)

Note of the change: Лабораторные работы 1-5

Last finish stays 2011-08-17.

Changed:

| ID | Task | Start | Finish | Duration | Total float | Other |
| --- | --- | --- | --- | --- | --- | --- |
| 3 | Изучение рынка бухгалтерских систем |  |  |  | 36d → 31.33d | resources none → Администратор; Интернет [0.1%] |
| 4 | Составление требований к бухгалтерским системам |  |  |  | 36d → 31.33d | resources none → Администратор; Главбух [20%] |
| 5 | Консультации с фирмами-разработчиками |  |  |  | 36d → 31.33d | resources none → Администратор; Междугородние переговоры [0.1%]; Интернет [0.1%] |
| 6 | Принятие окончательного решения |  |  |  | 36d → 31.33d | resources none → Администратор; Главбух |
| 9 | Заключение договоров |  |  |  |  | resources none → Администратор; Программист; Главбух |
| 10 | Оплата за ПО |  |  |  |  | resources none → Главбух [10%]; Бухгалтерская система; Офисный пакет; ОС рабочей станции; Серверная ОС |
| 11 | Оформление ПО на баланс |  |  |  |  | resources none → Бухгалтер учета ОС [30%] |
| 13 | **Составление проекта сети** |  | 2010-11-09 → 2010-11-19 (+10d) | 12d → 20d | 36d → 31.33d |  |
| 14 | Разработка архитектуры сети |  | 2010-11-02 → 2010-11-09 (+7d) | 7d → 11.67d | 36d → 31.33d | resources none → Администратор; Программист; Техник [50%] |
| 15 | Проработка физического размещения сети | 2010-11-03 → 2010-11-09 (+6d) | 2010-11-09 → 2010-11-19 (+10d) | 5d → 8.33d | 180d → 172d | resources none → Администратор; Программист; Техник |
| 16 | Проект сети завершен | 2010-11-09 → 2010-11-19 (+10d) | 2010-11-09 → 2010-11-19 (+10d) |  | 180d → 172d |  |
| 17 | **Приобретение компьютеров и сетевого оборудования** |  | 2010-11-30 → 2010-12-07 (+7d) | 27d → 31.67d | 36d → 31.33d |  |
| 18 | Сбор информации о поставщиках и предложениях |  |  |  |  | resources none → Администратор [50%]; Интернет [0.1%]; Междугородние переговоры [0.1%] |
| 19 | Анализ и выбор поставщика | 2010-11-03 → 2010-11-09 (+6d) | 2010-11-09 → 2010-11-16 (+7d) |  | 36d → 31.33d | resources none → Администратор [50%]; Главбух [20%]; Интернет [0.1%] |
| 20 | Заключение договоров | 2010-11-10 → 2010-11-16 (+6d) | 2010-11-16 → 2010-11-23 (+7d) |  | 36d → 31.33d | resources none → Администратор; Главбух [50%] |
| 21 | Оплата за оборудование | 2010-11-17 → 2010-11-23 (+6d) | 2010-11-18 → 2010-11-25 (+7d) |  | 36d → 31.33d | resources none → Главбух [30%]; Компьютер [1200%]; Сервер; Принтер [200%]; МФУ [200%]; Сетевой кабель [200%]; Сетевой концентратор; Панель; Разъемы и розетки |
| 22 | Оформление оборудования на баланс | 2010-11-26 → 2010-12-02 (+6d) | 2010-11-30 → 2010-12-07 (+7d) |  | 36d → 31.33d | resources none → Бухгалтер учета ОС [70%] |
| 23 | Приобретение оборудования завершено | 2010-11-30 → 2010-12-07 (+7d) | 2010-11-30 → 2010-12-07 (+7d) |  | 36d → 31.33d |  |
| 24 | **Обучение администратора и программиста** | 2010-11-10 → 2010-11-16 (+6d) | 2010-12-14 → 2010-12-20 (+6d) |  | 176d → 172d |  |
| 25 | Курсы администраторов | 2010-11-10 → 2010-11-22 (+12d) | 2010-12-03 → 2010-12-15 (+12d) |  | 180d → 172d | resources none → Администратор; Оплата курсов [0.1%] |
| 26 | Курсы программистов |  |  |  |  | resources none → Программист; Оплата курсов [0.1%] |
| 27 | Сдача сертификационных экзаменов | 2010-12-10 → 2010-12-16 (+6d) | 2010-12-14 → 2010-12-20 (+6d) |  | 176d → 172d | resources none → Администратор; Программист |
| 28 | Обучение завершено | 2010-12-14 → 2010-12-20 (+6d) | 2010-12-14 → 2010-12-20 (+6d) |  | 176d → 172d |  |
| 29 | **Монтаж локальной сети** | 2010-12-01 → 2010-12-07 (+6d) | 2010-12-21 → 2010-12-28 (+7d) |  | 36d → 31.33d |  |
| 30 | Установка компьютеров на рабочих местах | 2010-12-01 → 2010-12-07 (+6d) | 2010-12-03 → 2010-12-10 (+7d) |  | 43d → 38.33d | resources none → Техник |
| 31 | Монтаж кабеля | 2010-12-01 → 2010-12-07 (+6d) | 2010-12-14 → 2010-12-21 (+7d) |  | 36d → 31.33d | resources none → Техник |
| 32 | Монтаж сетевых устройств | 2010-12-01 → 2010-12-07 (+6d) | 2010-12-14 → 2010-12-21 (+7d) |  | 36d → 31.33d | resources none → Техник |
| 33 | Подключение кабеля к компьютерам и сетевым устройствам | 2010-12-15 → 2010-12-21 (+6d) | 2010-12-21 → 2010-12-28 (+7d) |  | 36d → 31.33d | resources none → Техник |
| 34 | Монтаж завершен | 2010-12-21 → 2010-12-28 (+7d) | 2010-12-21 → 2010-12-28 (+7d) |  | 36d → 31.33d |  |
| 35 | **Установка ПО на компьютеры** | 2010-12-22 → 2010-12-28 (+6d) | 2011-01-13 → 2011-01-20 (+7d) |  | 36d → 31.33d |  |
| 36 | Установка сервера | 2010-12-22 → 2010-12-28 (+6d) | 2010-12-28 → 2011-01-04 (+7d) |  | 36d → 31.33d | resources none → Администратор |
| 37 | Создание доменов и пользователей | 2010-12-29 → 2011-01-04 (+6d) | 2011-01-06 → 2011-01-13 (+7d) |  | 36d → 31.33d | resources none → Администратор |
| 38 | Проверка и настройка работы сети | 2011-01-07 → 2011-01-13 (+6d) | 2011-01-13 → 2011-01-20 (+7d) |  | 36d → 31.33d | resources none → Администратор; Программист |
| 39 | Настройка сети завершена | 2011-01-13 → 2011-01-20 (+7d) | 2011-01-13 → 2011-01-20 (+7d) |  | 36d → 31.33d |  |
| 40 | **Ввод начальных данных** | 2011-01-14 → 2011-01-20 (+6d) |  | 116d → 111.33d | 36d → 31.33d |  |
| 41 | Ввод справочников | 2011-01-14 → 2011-01-20 (+6d) | 2011-03-10 → 2011-03-17 (+7d) |  | 36d → 31.33d | resources none → Администратор; Программист; Расчетчик1 [30%]; Расчетчик2 [30%]; Расчетчик3 [30%]; Бухгалтер мат. учета1 [50%]; Бухгалтер мат. учета2 [50%]; Бухгалтер учета ОС и НМА [50%]; Бухгалтер учета ОС [50%]; Бухгалтер учета реализации [50%]; Бухгалтер производ. учета [50%]; DVD-матрица [1000%] |
| 42 | Ввод начальных остатков |  |  |  |  | resources none → Администратор; Программист; Главбух [50%]; DVD-матрица [1000%] |
| 44 | **Обучение персонала** | 2011-01-14 → 2011-01-20 (+6d) |  | 146d → 141.33d |  |  |
| 45 | Принципы работы системы | 2011-01-14 → 2011-01-20 (+6d) | 2011-01-18 → 2011-01-25 (+7d) |  | 88d → 83.33d | resources none → Администратор [50%]; Главбух [50%]; Расчетчик1 [50%]; Расчетчик2 [50%]; Расчетчик3 [50%]; Бухгалтер мат. учета1 [50%]; Бухгалтер мат. учета2 [50%]; Бухгалтер учета ОС и НМА [50%]; Бухгалтер учета ОС [50%]; Бухгалтер учета реализации [50%]; Бухгалтер производ. учета [50%] |
| 46 | Изучение интерфейса | 2011-01-19 → 2011-01-25 (+6d) | 2011-01-25 → 2011-02-01 (+7d) |  | 88d → 83.33d | resources none → Программист [50%]; Главбух [50%]; Расчетчик1 [50%]; Расчетчик2 [50%]; Расчетчик3 [50%]; Бухгалтер мат. учета1 [50%]; Бухгалтер мат. учета2 [50%]; Бухгалтер учета ОС и НМА [50%]; Бухгалтер учета ОС [50%]; Бухгалтер учета реализации [50%]; Бухгалтер производственного учета [50%] |
| 47 | Изучение справочников | 2011-01-26 → 2011-02-01 (+6d) | 2011-02-22 → 2011-03-01 (+7d) |  | 88d → 83.33d | resources none → Программист [50%]; Главбух [50%]; Расчетчик1 [50%]; Расчетчик2 [50%]; Расчетчик3 [50%]; Бухгалтер мат. учета1 [50%]; Бухгалтер мат. учета2 [50%]; Бухгалтер производ. учета [50%]; Бухгалтер учета ОС [50%] |
| 48 | Изучение документов и журналов |  |  |  |  | resources none → Программист [50%]; Главбух [50%]; Расчетчик1 [50%]; Расчетчик2 [50%]; Расчетчик3 [50%]; Бухгалтер мат. учета1 [50%]; Бухгалтер мат. учета2 [50%]; Бухгалтер учета ОС и НМА [50%]; Бухгалтер учета ОС [50%]; Бухгалтер учета реализации [50%]; Бухгалтер производс. учета [50%] |
| 51 | Формирование тестовой отчетности |  |  |  |  | resources none → Администратор; Программист; Главбух |
| 52 | Акт ввода в эксплуатацию |  |  |  |  | resources none → Администратор [50%]; Главбух [50%] |

## Version 3 (saved 2022-10-20, file Бух4_Ограничения.mpp)

Note of the change: Лабораторные работы 1-5

Last finish 2011-08-17 → 2011-09-13 (+27d).

Changed:

| ID | Task | Start | Finish | Duration | Total float |
| --- | --- | --- | --- | --- | --- |
| 2 | **Выбор системы** |  | 2010-10-22 → 2010-11-02 (+11d) | 16d → 23d | 31.33d → 9d |
| 4 | Составление требований к бухгалтерским системам |  | 2010-10-11 → 2010-10-20 (+9d) | 7d → 14d | 31.33d → 9d |
| 5 | Консультации с фирмами-разработчиками | 2010-10-12 → 2010-10-21 (+9d) | 2010-10-20 → 2010-10-29 (+9d) |  | 31.33d → 9d |
| 6 | Принятие окончательного решения | 2010-10-21 → 2010-11-01 (+11d) | 2010-10-22 → 2010-11-02 (+11d) |  | 31.33d → 9d |
| 7 | Выбор завершен | 2010-10-22 → 2010-11-02 (+11d) | 2010-10-22 → 2010-11-02 (+11d) |  | 31.33d → 9d |
| 8 | **Приобретение программного обеспечения** | 2010-10-25 → 2010-11-03 (+9d) | 2010-11-15 → 2010-12-28 (+43d) | 16d → 40d | 176d → 164d |
| 9 | Заключение договоров | 2010-10-25 → 2010-11-03 (+9d) | 2010-11-01 → 2010-12-14 (+43d) | 6d → 18d | 176d → 164d |
| 10 | Оплата за ПО | 2010-11-02 → 2010-12-15 (+43d) | 2010-11-03 → 2010-12-16 (+43d) |  | 176d → 164d |
| 11 | Оформление ПО на баланс | 2010-11-11 → 2010-12-24 (+43d) | 2010-11-15 → 2010-12-28 (+43d) |  | 176d → 164d |
| 12 | Приобретение ПО завершено | 2010-11-15 → 2010-12-28 (+43d) | 2010-11-15 → 2010-12-28 (+43d) |  | 176d → 164d |
| 13 | **Составление проекта сети** | 2010-10-25 → 2010-11-03 (+9d) | 2010-11-19 → 2010-12-21 (+32d) | 20d → 34.67d | 31.33d → 11.33d |
| 14 | Разработка архитектуры сети | 2010-10-25 → 2010-11-03 (+9d) | 2010-11-09 → 2010-11-18 (+9d) |  | 31.33d → 11.33d |
| 15 | Проработка физического размещения сети | 2010-11-09 → 2010-11-18 (+9d) | 2010-11-19 → 2010-12-21 (+32d) | 8.33d → 13d | 172d → 169.33d |
| 16 | Проект сети завершен | 2010-11-19 → 2010-12-21 (+32d) | 2010-11-19 → 2010-12-21 (+32d) |  | 172d → 169.33d |
| 17 | **Приобретение компьютеров и сетевого оборудования** | 2010-10-25 → 2010-11-12 (+18d) | 2010-12-07 → 2010-12-20 (+13d) | 31.67d → 27d | 31.33d → 9d |
| 18 | Сбор информации о поставщиках и предложениях | 2010-10-25 → 2010-11-12 (+18d) | 2010-11-02 → 2010-11-22 (+20d) |  | 36d → 9d |
| 19 | Анализ и выбор поставщика | 2010-11-09 → 2010-11-23 (+14d) | 2010-11-16 → 2010-11-29 (+13d) |  | 31.33d → 9d |
| 20 | Заключение договоров | 2010-11-16 → 2010-11-30 (+14d) | 2010-11-23 → 2010-12-06 (+13d) |  | 31.33d → 9d |
| 21 | Оплата за оборудование | 2010-11-23 → 2010-12-07 (+14d) | 2010-11-25 → 2010-12-08 (+13d) |  | 31.33d → 9d |
| 22 | Оформление оборудования на баланс | 2010-12-02 → 2010-12-16 (+14d) | 2010-12-07 → 2010-12-20 (+13d) |  | 31.33d → 9d |
| 23 | Приобретение оборудования завершено | 2010-12-07 → 2010-12-20 (+13d) | 2010-12-07 → 2010-12-20 (+13d) |  | 31.33d → 9d |
| 24 | **Обучение администратора и программиста** | 2010-11-16 → 2010-12-21 (+35d) | 2010-12-20 → 2011-01-26 (+37d) | 25d → 26.33d | 172d → 164d |
| 25 | Курсы администраторов | 2010-11-22 → 2010-12-21 (+29d) | 2010-12-15 → 2011-01-14 (+30d) |  | 172d → 169.33d |
| 26 | Курсы программистов | 2010-11-16 → 2010-12-29 (+43d) | 2010-12-09 → 2011-01-21 (+43d) |  | 176d → 164d |
| 27 | Сдача сертификационных экзаменов | 2010-12-16 → 2011-01-24 (+39d) | 2010-12-20 → 2011-01-26 (+37d) |  | 172d → 164d |
| 28 | Обучение завершено | 2010-12-20 → 2011-01-26 (+37d) | 2010-12-20 → 2011-01-26 (+37d) |  | 172d → 164d |
| 29 | **Монтаж локальной сети** | 2010-12-07 → 2010-12-21 (+14d) | 2010-12-28 → 2011-01-27 (+30d) | 15d → 28d | 31.33d → 9d |
| 30 | Установка компьютеров на рабочих местах | 2010-12-07 → 2011-01-18 (+42d) | 2010-12-10 → 2011-01-20 (+41d) |  | 38.33d → 9d |
| 31 | Монтаж кабеля | 2010-12-07 → 2010-12-21 (+14d) | 2010-12-21 → 2011-01-03 (+13d) |  | 31.33d → 22d |
| 32 | Монтаж сетевых устройств | 2010-12-07 → 2011-01-04 (+28d) | 2010-12-21 → 2011-01-17 (+27d) |  | 31.33d → 12d |
| 33 | Подключение кабеля к компьютерам и сетевым устройствам | 2010-12-21 → 2011-01-21 (+31d) | 2010-12-28 → 2011-01-27 (+30d) |  | 31.33d → 9d |
| 34 | Монтаж завершен | 2010-12-28 → 2011-01-27 (+30d) | 2010-12-28 → 2011-01-27 (+30d) |  | 31.33d → 9d |
| 35 | **Установка ПО на компьютеры** | 2010-12-28 → 2011-01-28 (+31d) | 2011-01-20 → 2011-02-21 (+32d) |  | 31.33d → 9d |
| 36 | Установка сервера | 2010-12-28 → 2011-01-28 (+31d) | 2011-01-04 → 2011-02-03 (+30d) |  | 31.33d → 9d |
| 37 | Создание доменов и пользователей | 2011-01-04 → 2011-02-04 (+31d) | 2011-01-13 → 2011-02-14 (+32d) |  | 31.33d → 9d |
| 38 | Проверка и настройка работы сети | 2011-01-13 → 2011-02-15 (+33d) | 2011-01-20 → 2011-02-21 (+32d) |  | 31.33d → 9d |
| 39 | Настройка сети завершена | 2011-01-20 → 2011-02-21 (+32d) | 2011-01-20 → 2011-02-21 (+32d) |  | 31.33d → 9d |
| 40 | **Ввод начальных данных** | 2011-01-20 → 2011-02-22 (+33d) | 2011-06-24 → 2011-07-21 (+27d) | 111.33d → 108d | 31.33d → 9d |
| 41 | Ввод справочников | 2011-01-20 → 2011-02-22 (+33d) | 2011-03-17 → 2011-04-18 (+32d) |  | 31.33d → 9d |
| 42 | Ввод начальных остатков |  | 2011-06-24 → 2011-07-21 (+27d) | 40d → 59d |  |
| 43 | Ввод начальных данных завершен | 2011-06-24 → 2011-07-21 (+27d) | 2011-06-24 → 2011-07-21 (+27d) |  |  |
| 44 | **Обучение персонала** | 2011-01-20 → 2011-02-22 (+33d) | 2011-08-05 → 2011-09-01 (+27d) | 141.33d → 138d |  |
| 45 | Принципы работы системы | 2011-01-20 → 2011-02-22 (+33d) | 2011-01-25 → 2011-04-21 (+86d) | 3d → 6d | 83.33d → 40d |
| 46 | Изучение интерфейса | 2011-01-25 → 2011-04-22 (+87d) | 2011-02-01 → 2011-04-28 (+86d) |  | 83.33d → 40d |
| 47 | Изучение справочников | 2011-02-01 → 2011-04-29 (+87d) | 2011-03-01 → 2011-05-26 (+86d) |  | 83.33d → 40d |
| 48 | Изучение документов и журналов | 2011-06-27 → 2011-07-22 (+25d) | 2011-08-05 → 2011-09-01 (+27d) |  |  |
| 49 | Обучение завершено | 2011-08-05 → 2011-09-01 (+27d) | 2011-08-05 → 2011-09-01 (+27d) |  |  |
| 50 | **Передача в эксплуатацию** | 2011-08-08 → 2011-09-02 (+25d) | 2011-08-17 → 2011-09-13 (+27d) |  |  |
| 51 | Формирование тестовой отчетности | 2011-08-08 → 2011-09-02 (+25d) | 2011-08-12 → 2011-09-08 (+27d) |  |  |
| 52 | Акт ввода в эксплуатацию | 2011-08-15 → 2011-09-09 (+25d) | 2011-08-17 → 2011-09-13 (+27d) |  |  |
| 53 | Передача в эксплуатацию завершена | 2011-08-17 → 2011-09-13 (+27d) | 2011-08-17 → 2011-09-13 (+27d) |  |  |
| 54 | Конец проекта | 2011-08-17 → 2011-09-13 (+27d) | 2011-08-17 → 2011-09-13 (+27d) |  |  |

## Version 4 (saved 2022-10-20, file Бух5_1.mpp)

Note of the change: Лабораторные работы 1-5

Last finish 2011-09-13 → 2011-08-17 (-27d).

Changed:

| ID | Task | Start | Finish | Duration | Total float |
| --- | --- | --- | --- | --- | --- |
| 2 | **Выбор системы** |  | 2010-11-02 → 2010-10-22 (-11d) | 23d → 16d | 9d → 16d |
| 4 | Составление требований к бухгалтерским системам |  | 2010-10-20 → 2010-10-11 (-9d) | 14d → 7d | 9d → 16d |
| 5 | Консультации с фирмами-разработчиками | 2010-10-21 → 2010-10-12 (-9d) | 2010-10-29 → 2010-10-20 (-9d) |  | 9d → 16d |
| 6 | Принятие окончательного решения | 2010-11-01 → 2010-10-21 (-11d) | 2010-11-02 → 2010-10-22 (-11d) |  | 9d → 16d |
| 7 | Выбор завершен | 2010-11-02 → 2010-10-22 (-11d) | 2010-11-02 → 2010-10-22 (-11d) |  | 9d → 16d |
| 8 | **Приобретение программного обеспечения** | 2010-11-03 → 2010-10-22 (-12d) | 2010-12-28 → 2010-11-15 (-43d) | 40d → 16d | 164d → 176d |
| 9 | Заключение договоров | 2010-11-03 → 2010-10-22 (-12d) | 2010-12-14 → 2010-11-01 (-43d) | 18d → 6d | 164d → 176d |
| 10 | Оплата за ПО | 2010-12-15 → 2010-11-02 (-43d) | 2010-12-16 → 2010-11-03 (-43d) |  | 164d → 176d |
| 11 | Оформление ПО на баланс | 2010-12-24 → 2010-11-11 (-43d) | 2010-12-28 → 2010-11-15 (-43d) |  | 164d → 176d |
| 12 | Приобретение ПО завершено | 2010-12-28 → 2010-11-15 (-43d) | 2010-12-28 → 2010-11-15 (-43d) |  | 164d → 176d |
| 13 | **Составление проекта сети** | 2010-11-03 → 2010-10-25 (-9d) | 2010-12-21 → 2010-11-09 (-42d) | 34.67d → 12d | 11.33d → 23d |
| 14 | Разработка архитектуры сети | 2010-11-03 → 2010-10-25 (-9d) | 2010-11-18 → 2010-11-02 (-16d) | 11.67d → 7d | 11.33d → 23d |
| 15 | Проработка физического размещения сети | 2010-11-18 → 2010-11-02 (-16d) | 2010-12-21 → 2010-11-09 (-42d) | 13d → 5d | 169.33d → 168d |
| 16 | Проект сети завершен | 2010-12-21 → 2010-11-09 (-42d) | 2010-12-21 → 2010-11-09 (-42d) |  | 169.33d → 168d |
| 17 | **Приобретение компьютеров и сетевого оборудования** | 2010-11-12 → 2010-11-03 (-9d) | 2010-12-20 → 2010-12-09 (-11d) |  | 9d → 16d |
| 18 | Сбор информации о поставщиках и предложениях | 2010-11-12 → 2010-11-03 (-9d) | 2010-11-22 → 2010-11-11 (-11d) |  | 9d → 16d |
| 19 | Анализ и выбор поставщика | 2010-11-23 → 2010-11-12 (-11d) | 2010-11-29 → 2010-11-18 (-11d) |  | 9d → 16d |
| 20 | Заключение договоров | 2010-11-30 → 2010-11-19 (-11d) | 2010-12-06 → 2010-11-25 (-11d) |  | 9d → 16d |
| 21 | Оплата за оборудование | 2010-12-07 → 2010-11-26 (-11d) | 2010-12-08 → 2010-11-29 (-9d) |  | 9d → 16d |
| 22 | Оформление оборудования на баланс | 2010-12-16 → 2010-12-07 (-9d) | 2010-12-20 → 2010-12-09 (-11d) |  | 9d → 16d |
| 23 | Приобретение оборудования завершено | 2010-12-20 → 2010-12-09 (-11d) | 2010-12-20 → 2010-12-09 (-11d) |  | 9d → 16d |
| 24 | **Обучение администратора и программиста** | 2010-12-21 → 2010-11-16 (-35d) | 2011-01-26 → 2010-12-24 (-33d) | 26.33d → 29d | 164d → 168d |
| 25 | Курсы администраторов | 2010-12-21 → 2010-11-26 (-25d) | 2011-01-14 → 2010-12-21 (-24d) |  | 169.33d → 168d |
| 26 | Курсы программистов | 2010-12-29 → 2010-11-16 (-43d) | 2011-01-21 → 2010-12-09 (-43d) |  | 164d → 176d |
| 27 | Сдача сертификационных экзаменов | 2011-01-24 → 2010-12-22 (-33d) | 2011-01-26 → 2010-12-24 (-33d) |  | 164d → 168d |
| 28 | Обучение завершено | 2011-01-26 → 2010-12-24 (-33d) | 2011-01-26 → 2010-12-24 (-33d) |  | 164d → 168d |
| 29 | **Монтаж локальной сети** | 2010-12-21 → 2010-12-10 (-11d) | 2011-01-27 → 2011-01-18 (-9d) |  | 9d → 16d |
| 30 | Установка компьютеров на рабочих местах | 2011-01-18 → 2011-01-07 (-11d) | 2011-01-20 → 2011-01-11 (-9d) |  | 9d → 16d |
| 31 | Монтаж кабеля | 2010-12-21 → 2010-12-10 (-11d) | 2011-01-03 → 2010-12-23 (-11d) |  | 22d → 29d |
| 32 | Монтаж сетевых устройств | 2011-01-04 → 2010-12-24 (-11d) | 2011-01-17 → 2011-01-06 (-11d) |  | 12d → 19d |
| 33 | Подключение кабеля к компьютерам и сетевым устройствам | 2011-01-21 → 2011-01-12 (-9d) | 2011-01-27 → 2011-01-18 (-9d) |  | 9d → 16d |
| 34 | Монтаж завершен | 2011-01-27 → 2011-01-18 (-9d) | 2011-01-27 → 2011-01-18 (-9d) |  | 9d → 16d |
| 35 | **Установка ПО на компьютеры** | 2011-01-28 → 2011-01-19 (-9d) | 2011-02-21 → 2011-02-10 (-11d) |  | 9d → 16d |
| 36 | Установка сервера | 2011-01-28 → 2011-01-19 (-9d) | 2011-02-03 → 2011-01-25 (-9d) |  | 9d → 16d |
| 37 | Создание доменов и пользователей | 2011-02-04 → 2011-01-26 (-9d) | 2011-02-14 → 2011-02-03 (-11d) |  | 9d → 16d |
| 38 | Проверка и настройка работы сети | 2011-02-15 → 2011-02-04 (-11d) | 2011-02-21 → 2011-02-10 (-11d) |  | 9d → 16d |
| 39 | Настройка сети завершена | 2011-02-21 → 2011-02-10 (-11d) | 2011-02-21 → 2011-02-10 (-11d) |  | 9d → 16d |
| 40 | **Ввод начальных данных** | 2011-02-22 → 2011-02-11 (-11d) | 2011-07-21 → 2011-06-24 (-27d) | 108d → 96d | 9d → 16d |
| 41 | Ввод справочников | 2011-02-22 → 2011-02-11 (-11d) | 2011-04-18 → 2011-04-07 (-11d) |  | 9d → 16d |
| 42 | Ввод начальных остатков |  | 2011-07-21 → 2011-06-24 (-27d) | 59d → 40d |  |
| 43 | Ввод начальных данных завершен | 2011-07-21 → 2011-06-24 (-27d) | 2011-07-21 → 2011-06-24 (-27d) |  |  |
| 44 | **Обучение персонала** | 2011-02-22 → 2011-02-10 (-12d) | 2011-09-01 → 2011-08-05 (-27d) | 138d → 126d |  |
| 45 | Принципы работы системы | 2011-02-22 → 2011-02-10 (-12d) | 2011-04-21 → 2011-02-15 (-65d) | 6d → 3d | 40d → 68d |
| 46 | Изучение интерфейса | 2011-04-22 → 2011-02-15 (-66d) | 2011-04-28 → 2011-02-22 (-65d) |  | 40d → 68d |
| 47 | Изучение справочников | 2011-04-29 → 2011-02-22 (-66d) | 2011-05-26 → 2011-03-22 (-65d) |  | 40d → 68d |
| 48 | Изучение документов и журналов | 2011-07-22 → 2011-06-27 (-25d) | 2011-09-01 → 2011-08-05 (-27d) |  |  |
| 49 | Обучение завершено | 2011-09-01 → 2011-08-05 (-27d) | 2011-09-01 → 2011-08-05 (-27d) |  |  |
| 50 | **Передача в эксплуатацию** | 2011-09-02 → 2011-08-08 (-25d) | 2011-09-13 → 2011-08-17 (-27d) |  |  |
| 51 | Формирование тестовой отчетности | 2011-09-02 → 2011-08-08 (-25d) | 2011-09-08 → 2011-08-12 (-27d) |  |  |
| 52 | Акт ввода в эксплуатацию | 2011-09-09 → 2011-08-15 (-25d) | 2011-09-13 → 2011-08-17 (-27d) |  |  |
| 53 | Передача в эксплуатацию завершена | 2011-09-13 → 2011-08-17 (-27d) | 2011-09-13 → 2011-08-17 (-27d) |  |  |
| 54 | Конец проекта | 2011-09-13 → 2011-08-17 (-27d) | 2011-09-13 → 2011-08-17 (-27d) |  |  |

## Version 5 (saved 2022-10-20, file Внедрение бухгалтерской системы.mpp)

Note of the change: Лабораторные работы 1-5

Last finish stays 2011-08-17.

Changed:

| ID | Task | Start | Finish | Duration | Total float |
| --- | --- | --- | --- | --- | --- |
| 17 | **Приобретение компьютеров и сетевого оборудования** | 2010-11-03 → 2010-10-25 (-9d) | 2010-12-09 → 2010-11-30 (-9d) |  | 16d → 36d |
| 18 | Сбор информации о поставщиках и предложениях | 2010-11-03 → 2010-10-25 (-9d) | 2010-11-11 → 2010-11-02 (-9d) |  | 16d → 36d |
| 19 | Анализ и выбор поставщика | 2010-11-12 → 2010-11-03 (-9d) | 2010-11-18 → 2010-11-09 (-9d) |  | 16d → 36d |
| 20 | Заключение договоров | 2010-11-19 → 2010-11-10 (-9d) | 2010-11-25 → 2010-11-16 (-9d) |  | 16d → 36d |
| 21 | Оплата за оборудование | 2010-11-26 → 2010-11-17 (-9d) | 2010-11-29 → 2010-11-18 (-11d) |  | 16d → 36d |
| 22 | Оформление оборудования на баланс | 2010-12-07 → 2010-11-26 (-11d) | 2010-12-09 → 2010-11-30 (-9d) |  | 16d → 36d |
| 23 | Приобретение оборудования завершено | 2010-12-09 → 2010-11-30 (-9d) | 2010-12-09 → 2010-11-30 (-9d) |  | 16d → 36d |
| 24 | **Обучение администратора и программиста** | 2010-11-16 → 2010-11-10 (-6d) | 2010-12-24 → 2010-12-14 (-10d) | 29d → 25d | 168d → 176d |
| 25 | Курсы администраторов | 2010-11-26 → 2010-11-10 (-16d) | 2010-12-21 → 2010-12-03 (-18d) |  | 168d → 180d |
| 27 | Сдача сертификационных экзаменов | 2010-12-22 → 2010-12-10 (-12d) | 2010-12-24 → 2010-12-14 (-10d) |  | 168d → 176d |
| 28 | Обучение завершено | 2010-12-24 → 2010-12-14 (-10d) | 2010-12-24 → 2010-12-14 (-10d) |  | 168d → 176d |
| 29 | **Монтаж локальной сети** | 2010-12-10 → 2010-12-01 (-9d) | 2011-01-18 → 2010-12-21 (-28d) | 28d → 15d | 16d → 36d |
| 30 | Установка компьютеров на рабочих местах | 2011-01-07 → 2010-12-01 (-37d) | 2011-01-11 → 2010-12-03 (-39d) |  | 16d → 43d |
| 31 | Монтаж кабеля | 2010-12-10 → 2010-12-01 (-9d) | 2010-12-23 → 2010-12-14 (-9d) |  | 29d → 36d |
| 32 | Монтаж сетевых устройств | 2010-12-24 → 2010-12-01 (-23d) | 2011-01-06 → 2010-12-14 (-23d) |  | 19d → 36d |
| 33 | Подключение кабеля к компьютерам и сетевым устройствам | 2011-01-12 → 2010-12-15 (-28d) | 2011-01-18 → 2010-12-21 (-28d) |  | 16d → 36d |
| 34 | Монтаж завершен | 2011-01-18 → 2010-12-21 (-28d) | 2011-01-18 → 2010-12-21 (-28d) |  | 16d → 36d |
| 35 | **Установка ПО на компьютеры** | 2011-01-19 → 2010-12-22 (-28d) | 2011-02-10 → 2011-01-13 (-28d) |  | 16d → 36d |
| 36 | Установка сервера | 2011-01-19 → 2010-12-22 (-28d) | 2011-01-25 → 2010-12-28 (-28d) |  | 16d → 36d |
| 37 | Создание доменов и пользователей | 2011-01-26 → 2010-12-29 (-28d) | 2011-02-03 → 2011-01-06 (-28d) |  | 16d → 36d |
| 38 | Проверка и настройка работы сети | 2011-02-04 → 2011-01-07 (-28d) | 2011-02-10 → 2011-01-13 (-28d) |  | 16d → 36d |
| 39 | Настройка сети завершена | 2011-02-10 → 2011-01-13 (-28d) | 2011-02-10 → 2011-01-13 (-28d) |  | 16d → 36d |
| 40 | **Ввод начальных данных** | 2011-02-11 → 2011-01-14 (-28d) |  | 96d → 116d | 16d → 36d |
| 41 | Ввод справочников | 2011-02-11 → 2011-01-14 (-28d) | 2011-04-07 → 2011-03-10 (-28d) |  | 16d → 36d |
| 44 | **Обучение персонала** | 2011-02-10 → 2011-01-13 (-28d) |  | 126d → 146d |  |
| 45 | Принципы работы системы | 2011-02-10 → 2011-01-13 (-28d) | 2011-02-15 → 2011-01-18 (-28d) |  | 68d → 88d |
| 46 | Изучение интерфейса | 2011-02-15 → 2011-01-18 (-28d) | 2011-02-22 → 2011-01-25 (-28d) |  | 68d → 88d |
| 47 | Изучение справочников | 2011-02-22 → 2011-01-25 (-28d) | 2011-03-22 → 2011-02-22 (-28d) |  | 68d → 88d |

## Version 6 (saved 2022-10-20, file Бух5_5.mpp)

Note of the change: Лабораторные работы 1-5

Last finish stays 2011-08-17.

Changed:

| ID | Task | Start | Finish | Duration | Total float |
| --- | --- | --- | --- | --- | --- |
| 17 | **Приобретение компьютеров и сетевого оборудования** | 2010-10-25 → 2010-11-03 (+9d) | 2010-11-30 → 2010-12-09 (+9d) |  | 36d → 17d |
| 18 | Сбор информации о поставщиках и предложениях | 2010-10-25 → 2010-11-03 (+9d) | 2010-11-02 → 2010-11-11 (+9d) |  | 36d → 17d |
| 19 | Анализ и выбор поставщика | 2010-11-03 → 2010-11-12 (+9d) | 2010-11-09 → 2010-11-18 (+9d) |  | 36d → 17d |
| 20 | Заключение договоров | 2010-11-10 → 2010-11-19 (+9d) | 2010-11-16 → 2010-11-25 (+9d) |  | 36d → 17d |
| 21 | Оплата за оборудование | 2010-11-17 → 2010-11-26 (+9d) | 2010-11-18 → 2010-11-29 (+11d) |  | 36d → 17d |
| 22 | Оформление оборудования на баланс | 2010-11-26 → 2010-12-07 (+11d) | 2010-11-30 → 2010-12-09 (+9d) |  | 36d → 17d |
| 23 | Приобретение оборудования завершено | 2010-11-30 → 2010-12-09 (+9d) | 2010-11-30 → 2010-12-09 (+9d) |  | 36d → 17d |
| 24 | **Обучение администратора и программиста** | 2010-11-10 → 2010-11-16 (+6d) | 2010-12-14 → 2010-12-24 (+10d) | 25d → 29d | 176d → 168d |
| 25 | Курсы администраторов | 2010-11-10 → 2010-11-26 (+16d) | 2010-12-03 → 2010-12-21 (+18d) |  | 180d → 168d |
| 27 | Сдача сертификационных экзаменов | 2010-12-10 → 2010-12-22 (+12d) | 2010-12-14 → 2010-12-24 (+10d) |  | 176d → 168d |
| 28 | Обучение завершено | 2010-12-14 → 2010-12-24 (+10d) | 2010-12-14 → 2010-12-24 (+10d) |  | 176d → 168d |
| 29 | **Монтаж локальной сети** | 2010-12-01 → 2010-12-10 (+9d) | 2010-12-21 → 2011-01-17 (+27d) | 15d → 27d | 36d → 17d |
| 30 | Установка компьютеров на рабочих местах | 2010-12-01 → 2011-01-07 (+37d) | 2010-12-03 → 2011-01-10 (+38d) | 3d → 2d | 43d → 17d |
| 31 | Монтаж кабеля | 2010-12-01 → 2010-12-10 (+9d) | 2010-12-14 → 2010-12-23 (+9d) |  | 36d → 29d |
| 32 | Монтаж сетевых устройств | 2010-12-01 → 2010-12-24 (+23d) | 2010-12-14 → 2011-01-06 (+23d) |  | 36d → 19d |
| 33 | Подключение кабеля к компьютерам и сетевым устройствам | 2010-12-15 → 2011-01-11 (+27d) | 2010-12-21 → 2011-01-17 (+27d) |  | 36d → 17d |
| 34 | Монтаж завершен | 2010-12-21 → 2011-01-17 (+27d) | 2010-12-21 → 2011-01-17 (+27d) |  | 36d → 17d |
| 35 | **Установка ПО на компьютеры** | 2010-12-22 → 2011-01-18 (+27d) | 2011-01-13 → 2011-02-09 (+27d) |  | 36d → 17d |
| 36 | Установка сервера | 2010-12-22 → 2011-01-18 (+27d) | 2010-12-28 → 2011-01-24 (+27d) |  | 36d → 17d |
| 37 | Создание доменов и пользователей | 2010-12-29 → 2011-01-25 (+27d) | 2011-01-06 → 2011-02-02 (+27d) |  | 36d → 17d |
| 38 | Проверка и настройка работы сети | 2011-01-07 → 2011-02-03 (+27d) | 2011-01-13 → 2011-02-09 (+27d) |  | 36d → 17d |
| 39 | Настройка сети завершена | 2011-01-13 → 2011-02-09 (+27d) | 2011-01-13 → 2011-02-09 (+27d) |  | 36d → 17d |
| 40 | **Ввод начальных данных** | 2011-01-14 → 2011-02-10 (+27d) |  | 116d → 97d | 36d → 17d |
| 41 | Ввод справочников | 2011-01-14 → 2011-02-10 (+27d) | 2011-03-10 → 2011-04-06 (+27d) |  | 36d → 17d |
| 44 | **Обучение персонала** | 2011-01-13 → 2011-02-09 (+27d) |  | 146d → 127d |  |
| 45 | Принципы работы системы | 2011-01-13 → 2011-02-09 (+27d) | 2011-01-18 → 2011-02-14 (+27d) |  | 88d → 69d |
| 46 | Изучение интерфейса | 2011-01-18 → 2011-02-14 (+27d) | 2011-01-25 → 2011-02-21 (+27d) |  | 88d → 69d |
| 47 | Изучение справочников | 2011-01-25 → 2011-02-21 (+27d) | 2011-02-22 → 2011-03-21 (+27d) |  | 88d → 69d |

## Version 7 (saved 2022-10-21, file Бух6_Процент.mpp)

Note of the change: Лабораторные работы 6-7

Last finish stays 2011-08-17.

Changed:

| ID | Task | Start | Finish | Duration | Complete | Total float | Other |
| --- | --- | --- | --- | --- | --- | --- | --- |
| 1 | Начало проекта |  |  |  |  | 17d → 3.45d | baseline start none → 2010-10-01; baseline finish none → 2010-10-01 |
| 2 | **Выбор системы** | 2010-10-01 A |  |  | 0% → 30% | 17d → 16d | baseline start none → 2010-10-01; baseline finish none → 2010-10-22 |
| 3 | Изучение рынка бухгалтерских систем | 2010-10-01 A |  |  | 0% → 49% | 17d → 16d | baseline start none → 2010-10-01; baseline finish none → 2010-10-11 |
| 4 | Составление требований к бухгалтерским системам | 2010-10-01 A |  |  | 0% → 49% | 17d → 16d | baseline start none → 2010-10-01; baseline finish none → 2010-10-11 |
| 5 | Консультации с фирмами-разработчиками |  |  |  |  | 17d → 16d | baseline start none → 2010-10-12; baseline finish none → 2010-10-20 |
| 6 | Принятие окончательного решения |  |  |  |  | 17d → 16d | baseline start none → 2010-10-21; baseline finish none → 2010-10-22 |
| 7 | Выбор завершен |  |  |  |  | 17d → 16d | baseline start none → 2010-10-22; baseline finish none → 2010-10-22 |
| 8 | **Приобретение программного обеспечения** |  |  |  |  |  | baseline start none → 2010-10-22; baseline finish none → 2010-11-15 |
| 9 | Заключение договоров |  |  |  |  |  | baseline start none → 2010-10-22; baseline finish none → 2010-11-01 |
| 10 | Оплата за ПО |  |  |  |  |  | baseline start none → 2010-11-02; baseline finish none → 2010-11-03 |
| 11 | Оформление ПО на баланс |  |  |  |  |  | baseline start none → 2010-11-11; baseline finish none → 2010-11-15 |
| 12 | Приобретение ПО завершено |  |  |  |  |  | baseline start none → 2010-11-15; baseline finish none → 2010-11-15 |
| 13 | **Составление проекта сети** |  |  |  |  | 24d → 23d | baseline start none → 2010-10-25; baseline finish none → 2010-11-09 |
| 14 | Разработка архитектуры сети |  |  |  |  | 24d → 23d | baseline start none → 2010-10-25; baseline finish none → 2010-11-02 |
| 15 | Проработка физического размещения сети |  |  |  |  |  | baseline start none → 2010-11-02; baseline finish none → 2010-11-09 |
| 16 | Проект сети завершен |  |  |  |  |  | baseline start none → 2010-11-09; baseline finish none → 2010-11-09 |
| 17 | **Приобретение компьютеров и сетевого оборудования** |  |  |  |  | 17d → 16d | baseline start none → 2010-11-03; baseline finish none → 2010-12-09 |
| 18 | Сбор информации о поставщиках и предложениях |  |  |  |  | 17d → 16d | baseline start none → 2010-11-03; baseline finish none → 2010-11-11 |
| 19 | Анализ и выбор поставщика |  |  |  |  | 17d → 16d | baseline start none → 2010-11-12; baseline finish none → 2010-11-18 |
| 20 | Заключение договоров |  |  |  |  | 17d → 16d | baseline start none → 2010-11-19; baseline finish none → 2010-11-25 |
| 21 | Оплата за оборудование |  |  |  |  | 17d → 16d | baseline start none → 2010-11-26; baseline finish none → 2010-11-29 |
| 22 | Оформление оборудования на баланс |  |  |  |  | 17d → 16d | baseline start none → 2010-12-07; baseline finish none → 2010-12-09 |
| 23 | Приобретение оборудования завершено |  |  |  |  | 17d → 16d | baseline start none → 2010-12-09; baseline finish none → 2010-12-09 |
| 24 | **Обучение администратора и программиста** |  |  |  |  |  | baseline start none → 2010-11-16; baseline finish none → 2010-12-24 |
| 25 | Курсы администраторов |  |  |  |  |  | baseline start none → 2010-11-26; baseline finish none → 2010-12-21 |
| 26 | Курсы программистов |  |  |  |  |  | baseline start none → 2010-11-16; baseline finish none → 2010-12-09 |
| 27 | Сдача сертификационных экзаменов |  |  |  |  |  | baseline start none → 2010-12-22; baseline finish none → 2010-12-24 |
| 28 | Обучение завершено |  |  |  |  |  | baseline start none → 2010-12-24; baseline finish none → 2010-12-24 |
| 29 | **Монтаж локальной сети** |  | 2011-01-17 → 2011-01-18 (+1d) | 27d → 28d |  | 17d → 16d | baseline start none → 2010-12-10; baseline finish none → 2011-01-18 |
| 30 | Установка компьютеров на рабочих местах |  | 2011-01-10 → 2011-01-11 (+1d) | 2d → 3d |  | 17d → 16d | baseline start none → 2011-01-07; baseline finish none → 2011-01-11 |
| 31 | Монтаж кабеля |  |  |  |  |  | baseline start none → 2010-12-10; baseline finish none → 2010-12-23 |
| 32 | Монтаж сетевых устройств |  |  |  |  |  | baseline start none → 2010-12-24; baseline finish none → 2011-01-06 |
| 33 | Подключение кабеля к компьютерам и сетевым устройствам | 2011-01-11 → 2011-01-12 (+1d) | 2011-01-17 → 2011-01-18 (+1d) |  |  | 17d → 16d | baseline start none → 2011-01-12; baseline finish none → 2011-01-18 |
| 34 | Монтаж завершен | 2011-01-17 → 2011-01-18 (+1d) | 2011-01-17 → 2011-01-18 (+1d) |  |  | 17d → 16d | baseline start none → 2011-01-18; baseline finish none → 2011-01-18 |
| 35 | **Установка ПО на компьютеры** | 2011-01-18 → 2011-01-19 (+1d) | 2011-02-09 → 2011-02-10 (+1d) |  |  | 17d → 16d | baseline start none → 2011-01-19; baseline finish none → 2011-02-10 |
| 36 | Установка сервера | 2011-01-18 → 2011-01-19 (+1d) | 2011-01-24 → 2011-01-25 (+1d) |  |  | 17d → 16d | baseline start none → 2011-01-19; baseline finish none → 2011-01-25 |
| 37 | Создание доменов и пользователей | 2011-01-25 → 2011-01-26 (+1d) | 2011-02-02 → 2011-02-03 (+1d) |  |  | 17d → 16d | baseline start none → 2011-01-26; baseline finish none → 2011-02-03 |
| 38 | Проверка и настройка работы сети | 2011-02-03 → 2011-02-04 (+1d) | 2011-02-09 → 2011-02-10 (+1d) |  |  | 17d → 16d | baseline start none → 2011-02-04; baseline finish none → 2011-02-10 |
| 39 | Настройка сети завершена | 2011-02-09 → 2011-02-10 (+1d) | 2011-02-09 → 2011-02-10 (+1d) |  |  | 17d → 16d | baseline start none → 2011-02-10; baseline finish none → 2011-02-10 |
| 40 | **Ввод начальных данных** | 2011-02-10 → 2011-02-11 (+1d) |  | 97d → 96d |  | 17d → 16d | baseline start none → 2011-02-11; baseline finish none → 2011-06-24 |
| 41 | Ввод справочников | 2011-02-10 → 2011-02-11 (+1d) | 2011-04-06 → 2011-04-07 (+1d) |  |  | 17d → 16d | baseline start none → 2011-02-11; baseline finish none → 2011-04-07 |
| 42 | Ввод начальных остатков |  |  |  |  |  | baseline start none → 2011-05-02; baseline finish none → 2011-06-24 |
| 43 | Ввод начальных данных завершен |  |  |  |  |  | baseline start none → 2011-06-24; baseline finish none → 2011-06-24 |
| 44 | **Обучение персонала** | 2011-02-09 → 2011-02-10 (+1d) |  | 127d → 126d |  |  | baseline start none → 2011-02-10; baseline finish none → 2011-08-05 |
| 45 | Принципы работы системы | 2011-02-09 → 2011-02-10 (+1d) | 2011-02-14 → 2011-02-15 (+1d) |  |  | 69d → 68d | baseline start none → 2011-02-10; baseline finish none → 2011-02-15 |
| 46 | Изучение интерфейса | 2011-02-14 → 2011-02-15 (+1d) | 2011-02-21 → 2011-02-22 (+1d) |  |  | 69d → 68d | baseline start none → 2011-02-15; baseline finish none → 2011-02-22 |
| 47 | Изучение справочников | 2011-02-21 → 2011-02-22 (+1d) | 2011-03-21 → 2011-03-22 (+1d) |  |  | 69d → 68d | baseline start none → 2011-02-22; baseline finish none → 2011-03-22 |
| 48 | Изучение документов и журналов |  |  |  |  |  | baseline start none → 2011-06-27; baseline finish none → 2011-08-05 |
| 49 | Обучение завершено |  |  |  |  |  | baseline start none → 2011-08-05; baseline finish none → 2011-08-05 |
| 50 | **Передача в эксплуатацию** |  |  |  |  |  | baseline start none → 2011-08-08; baseline finish none → 2011-08-17 |
| 51 | Формирование тестовой отчетности |  |  |  |  |  | baseline start none → 2011-08-08; baseline finish none → 2011-08-12 |
| 52 | Акт ввода в эксплуатацию |  |  |  |  |  | baseline start none → 2011-08-15; baseline finish none → 2011-08-17 |
| 53 | Передача в эксплуатацию завершена |  |  |  |  |  | baseline start none → 2011-08-17; baseline finish none → 2011-08-17 |
| 54 | Конец проекта |  |  |  |  |  | baseline start none → 2011-08-17; baseline finish none → 2011-08-17 |

## Version 8 (saved 2022-10-21, file Бух6_Фактич.mpp)

Note of the change: Лабораторные работы 6-7

Last finish stays 2011-08-17.

Changed:

| ID | Task | Start | Finish | Duration | Complete | Total float | Other |
| --- | --- | --- | --- | --- | --- | --- | --- |
| 1 | Начало проекта |  |  |  |  | 3.45d → 2d | baseline start 2010-10-01 → none; baseline finish 2010-10-01 → none |
| 2 | **Выбор системы** | 2010-10-01 A → 2010-10-01 |  |  | 30% → 0% | 16d → 2d | baseline start 2010-10-01 → none; baseline finish 2010-10-22 → none |
| 3 | Изучение рынка бухгалтерских систем | 2010-10-01 A → 2010-10-01 |  |  | 49% → 0% | 16d → 2d | baseline start 2010-10-01 → none; baseline finish 2010-10-11 → none |
| 4 | Составление требований к бухгалтерским системам | 2010-10-01 A → 2010-10-01 |  |  | 49% → 0% | 16d → 2d | baseline start 2010-10-01 → none; baseline finish 2010-10-11 → none |
| 5 | Консультации с фирмами-разработчиками |  |  |  |  | 16d → 2d | baseline start 2010-10-12 → none; baseline finish 2010-10-20 → none |
| 6 | Принятие окончательного решения |  |  |  |  | 16d → 2d | baseline start 2010-10-21 → none; baseline finish 2010-10-22 → none |
| 7 | Выбор завершен |  |  |  |  | 16d → 2d | baseline start 2010-10-22 → none; baseline finish 2010-10-22 → none |
| 8 | **Приобретение программного обеспечения** | 2010-10-22 → 2010-10-25 A (+3d) | 2010-11-15 → 2010-12-13 (+28d) | 16d → 35.88d | 0% → 58% | 176d → 81.12d | baseline start 2010-10-22 → none; baseline finish 2010-11-15 → none |
| 9 | Заключение договоров | 2010-10-22 → 2010-10-25 A (+3d) | 2010-11-01 → 2010-11-29 (+28d) | 6d → 10.12d | 0% → 86% | 176d → 81.12d | baseline start 2010-10-22 → none; baseline finish 2010-11-01 → none |
| 10 | Оплата за ПО | 2010-11-02 → 2010-11-29 (+27d) | 2010-11-03 → 2010-12-01 (+28d) |  |  | 176d → 81.12d | baseline start 2010-11-02 → none; baseline finish 2010-11-03 → none |
| 11 | Оформление ПО на баланс | 2010-11-11 → 2010-12-08 (+27d) | 2010-11-15 → 2010-12-13 (+28d) |  |  | 176d → 81.12d | baseline start 2010-11-11 → none; baseline finish 2010-11-15 → none |
| 12 | Приобретение ПО завершено | 2010-11-15 → 2010-12-13 (+28d) | 2010-11-15 → 2010-12-13 (+28d) |  |  | 176d → 81.12d | baseline start 2010-11-15 → none; baseline finish 2010-11-15 → none |
| 13 | **Составление проекта сети** |  |  |  |  | 23d → 2d | baseline start 2010-10-25 → none; baseline finish 2010-11-09 → none |
| 14 | Разработка архитектуры сети |  |  |  |  | 23d → 2d | baseline start 2010-10-25 → none; baseline finish 2010-11-02 → none |
| 15 | Проработка физического размещения сети |  |  |  |  | 168d → 2d | baseline start 2010-11-02 → none; baseline finish 2010-11-09 → none |
| 16 | Проект сети завершен |  |  |  |  | 168d → 2d | baseline start 2010-11-09 → none; baseline finish 2010-11-09 → none |
| 17 | **Приобретение компьютеров и сетевого оборудования** |  |  |  |  |  | baseline start 2010-11-03 → none; baseline finish 2010-12-09 → none |
| 18 | Сбор информации о поставщиках и предложениях |  |  |  |  |  | baseline start 2010-11-03 → none; baseline finish 2010-11-11 → none |
| 19 | Анализ и выбор поставщика |  |  |  |  |  | baseline start 2010-11-12 → none; baseline finish 2010-11-18 → none |
| 20 | Заключение договоров |  |  |  |  |  | baseline start 2010-11-19 → none; baseline finish 2010-11-25 → none |
| 21 | Оплата за оборудование |  |  |  |  |  | baseline start 2010-11-26 → none; baseline finish 2010-11-29 → none |
| 22 | Оформление оборудования на баланс |  |  |  |  |  | baseline start 2010-12-07 → none; baseline finish 2010-12-09 → none |
| 23 | Приобретение оборудования завершено |  |  |  |  |  | baseline start 2010-12-09 → none; baseline finish 2010-12-09 → none |
| 24 | **Обучение администратора и программиста** | 2010-11-16 → 2010-11-29 (+13d) | 2010-12-24 → 2011-08-16 (+235d) | 29d → 185.62d |  | 168d → 1.5d | baseline start 2010-11-16 → none; baseline finish 2010-12-24 → none |
| 25 | Курсы администраторов | 2010-11-26 → 2010-11-29 (+3d) | 2010-12-21 → 2011-04-28 (+128d) |  |  | 168d → 1.5d | baseline start 2010-11-26 → none; baseline finish 2010-12-21 → none |
| 26 | Курсы программистов | 2010-11-16 → 2010-12-13 (+27d) | 2010-12-09 → 2011-01-06 (+28d) |  |  | 176d → 81.12d | baseline start 2010-11-16 → none; baseline finish 2010-12-09 → none |
| 27 | Сдача сертификационных экзаменов | 2010-12-22 → 2011-04-28 (+127d) | 2010-12-24 → 2011-08-16 (+235d) | 3d → 4.5d |  | 168d → 1.5d | baseline start 2010-12-22 → none; baseline finish 2010-12-24 → none |
| 28 | Обучение завершено | 2010-12-24 → 2011-08-16 (+235d) | 2010-12-24 → 2011-08-16 (+235d) |  |  | 168d → 1.5d | baseline start 2010-12-24 → none; baseline finish 2010-12-24 → none |
| 29 | **Монтаж локальной сети** |  |  |  |  |  | baseline start 2010-12-10 → none; baseline finish 2011-01-18 → none |
| 30 | Установка компьютеров на рабочих местах |  |  |  |  |  | baseline start 2011-01-07 → none; baseline finish 2011-01-11 → none |
| 31 | Монтаж кабеля |  |  |  |  |  | baseline start 2010-12-10 → none; baseline finish 2010-12-23 → none |
| 32 | Монтаж сетевых устройств |  |  |  |  |  | baseline start 2010-12-24 → none; baseline finish 2011-01-06 → none |
| 33 | Подключение кабеля к компьютерам и сетевым устройствам |  |  |  |  |  | baseline start 2011-01-12 → none; baseline finish 2011-01-18 → none |
| 34 | Монтаж завершен |  |  |  |  |  | baseline start 2011-01-18 → none; baseline finish 2011-01-18 → none |
| 35 | **Установка ПО на компьютеры** |  |  |  |  |  | baseline start 2011-01-19 → none; baseline finish 2011-02-10 → none |
| 36 | Установка сервера |  |  |  |  |  | baseline start 2011-01-19 → none; baseline finish 2011-01-25 → none |
| 37 | Создание доменов и пользователей |  |  |  |  |  | baseline start 2011-01-26 → none; baseline finish 2011-02-03 → none |
| 38 | Проверка и настройка работы сети |  |  |  |  |  | baseline start 2011-02-04 → none; baseline finish 2011-02-10 → none |
| 39 | Настройка сети завершена |  |  |  |  |  | baseline start 2011-02-10 → none; baseline finish 2011-02-10 → none |
| 40 | **Ввод начальных данных** |  |  |  |  |  | baseline start 2011-02-11 → none; baseline finish 2011-06-24 → none |
| 41 | Ввод справочников |  |  |  |  |  | baseline start 2011-02-11 → none; baseline finish 2011-04-07 → none |
| 42 | Ввод начальных остатков |  |  |  |  |  | baseline start 2011-05-02 → none; baseline finish 2011-06-24 → none |
| 43 | Ввод начальных данных завершен |  |  |  |  |  | baseline start 2011-06-24 → none; baseline finish 2011-06-24 → none |
| 44 | **Обучение персонала** |  |  |  |  |  | baseline start 2011-02-10 → none; baseline finish 2011-08-05 → none |
| 45 | Принципы работы системы |  |  |  |  |  | baseline start 2011-02-10 → none; baseline finish 2011-02-15 → none |
| 46 | Изучение интерфейса |  |  |  |  |  | baseline start 2011-02-15 → none; baseline finish 2011-02-22 → none |
| 47 | Изучение справочников |  |  |  |  |  | baseline start 2011-02-22 → none; baseline finish 2011-03-22 → none |
| 48 | Изучение документов и журналов |  |  |  |  |  | baseline start 2011-06-27 → none; baseline finish 2011-08-05 → none |
| 49 | Обучение завершено |  |  |  |  |  | baseline start 2011-08-05 → none; baseline finish 2011-08-05 → none |
| 50 | **Передача в эксплуатацию** |  |  |  |  |  | baseline start 2011-08-08 → none; baseline finish 2011-08-17 → none |
| 51 | Формирование тестовой отчетности |  |  |  |  |  | baseline start 2011-08-08 → none; baseline finish 2011-08-12 → none |
| 52 | Акт ввода в эксплуатацию |  |  |  |  |  | baseline start 2011-08-15 → none; baseline finish 2011-08-17 → none |
| 53 | Передача в эксплуатацию завершена |  |  |  |  |  | baseline start 2011-08-17 → none; baseline finish 2011-08-17 → none |
| 54 | Конец проекта |  |  |  |  |  | baseline start 2011-08-17 → none; baseline finish 2011-08-17 → none |

## Version 9 (saved 2022-10-21, file Бух6_Задачи.mpp)

Note of the change: Лабораторные работы 6-7

Last finish stays 2011-08-17.

Changed:

| ID | Task | Start | Finish | Duration | Complete | Total float |
| --- | --- | --- | --- | --- | --- | --- |
| 8 | **Приобретение программного обеспечения** | 2010-10-25 A → 2010-10-22 (-3d) | 2010-12-13 → 2010-11-15 (-28d) | 35.88d → 16d | 58% → 0% | 81.12d → 176d |
| 9 | Заключение договоров | 2010-10-25 A → 2010-10-22 (-3d) | 2010-11-29 → 2010-11-01 (-28d) | 10.12d → 6d | 86% → 0% | 81.12d → 176d |
| 10 | Оплата за ПО | 2010-11-29 → 2010-11-02 (-27d) | 2010-12-01 → 2010-11-03 (-28d) |  |  | 81.12d → 176d |
| 11 | Оформление ПО на баланс | 2010-12-08 → 2010-11-11 (-27d) | 2010-12-13 → 2010-11-15 (-28d) |  |  | 81.12d → 176d |
| 12 | Приобретение ПО завершено | 2010-12-13 → 2010-11-15 (-28d) | 2010-12-13 → 2010-11-15 (-28d) |  |  | 81.12d → 176d |
| 17 | **Приобретение компьютеров и сетевого оборудования** | 2010-11-03 → 2010-10-25 (-9d) | 2010-12-09 → 2010-12-08 (-1d) | 27d → 33d |  | 16d → 17d |
| 18 | Сбор информации о поставщиках и предложениях | 2010-11-03 → 2010-10-25 (-9d) | 2010-11-11 → 2010-11-10 (-1d) |  |  | 16d → 17d |
| 19 | Анализ и выбор поставщика | 2010-11-12 → 2010-11-11 (-1d) | 2010-11-18 → 2010-11-17 (-1d) |  |  | 16d → 17d |
| 20 | Заключение договоров | 2010-11-19 → 2010-11-18 (-1d) | 2010-11-25 → 2010-11-24 (-1d) |  |  | 16d → 17d |
| 21 | Оплата за оборудование | 2010-11-26 → 2010-11-25 (-1d) | 2010-11-29 → 2010-11-26 (-3d) |  |  | 16d → 17d |
| 22 | Оформление оборудования на баланс | 2010-12-07 → 2010-12-06 (-1d) | 2010-12-09 → 2010-12-08 (-1d) |  |  | 16d → 17d |
| 23 | Приобретение оборудования завершено | 2010-12-09 → 2010-12-08 (-1d) | 2010-12-09 → 2010-12-08 (-1d) |  |  | 16d → 17d |
| 24 | **Обучение администратора и программиста** | 2010-11-29 → 2010-11-16 (-13d) | 2011-08-16 → 2010-12-23 (-236d) | 185.62d → 28d |  | 1.5d → 169d |
| 25 | Курсы администраторов | 2010-11-29 → 2010-11-25 (-4d) | 2011-04-28 → 2010-12-20 (-129d) |  |  | 1.5d → 169d |
| 26 | Курсы программистов | 2010-12-13 → 2010-11-16 (-27d) | 2011-01-06 → 2010-12-09 (-28d) |  |  | 81.12d → 176d |
| 27 | Сдача сертификационных экзаменов | 2011-04-28 → 2010-12-21 (-128d) | 2011-08-16 → 2010-12-23 (-236d) | 4.5d → 3d |  | 1.5d → 169d |
| 28 | Обучение завершено | 2011-08-16 → 2010-12-23 (-236d) | 2011-08-16 → 2010-12-23 (-236d) |  |  | 1.5d → 169d |
| 29 | **Монтаж локальной сети** | 2010-12-10 → 2010-12-09 (-1d) | 2011-01-18 → 2011-01-17 (-1d) |  |  | 16d → 17d |
| 30 | Установка компьютеров на рабочих местах | 2011-01-07 → 2011-01-06 (-1d) | 2011-01-11 → 2011-01-10 (-1d) |  |  | 16d → 17d |
| 31 | Монтаж кабеля | 2010-12-10 → 2010-12-09 (-1d) | 2010-12-23 → 2010-12-22 (-1d) |  |  | 29d → 30d |
| 32 | Монтаж сетевых устройств | 2010-12-24 → 2010-12-23 (-1d) | 2011-01-06 → 2011-01-05 (-1d) |  |  | 19d → 20d |
| 33 | Подключение кабеля к компьютерам и сетевым устройствам | 2011-01-12 → 2011-01-11 (-1d) | 2011-01-18 → 2011-01-17 (-1d) |  |  | 16d → 17d |
| 34 | Монтаж завершен | 2011-01-18 → 2011-01-17 (-1d) | 2011-01-18 → 2011-01-17 (-1d) |  |  | 16d → 17d |
| 35 | **Установка ПО на компьютеры** | 2011-01-19 → 2011-01-18 (-1d) | 2011-02-10 → 2011-02-09 (-1d) |  |  | 16d → 17d |
| 36 | Установка сервера | 2011-01-19 → 2011-01-18 (-1d) | 2011-01-25 → 2011-01-24 (-1d) |  |  | 16d → 17d |
| 37 | Создание доменов и пользователей | 2011-01-26 → 2011-01-25 (-1d) | 2011-02-03 → 2011-02-02 (-1d) |  |  | 16d → 17d |
| 38 | Проверка и настройка работы сети | 2011-02-04 → 2011-02-03 (-1d) | 2011-02-10 → 2011-02-09 (-1d) |  |  | 16d → 17d |
| 39 | Настройка сети завершена | 2011-02-10 → 2011-02-09 (-1d) | 2011-02-10 → 2011-02-09 (-1d) |  |  | 16d → 17d |
| 40 | **Ввод начальных данных** | 2011-02-11 → 2011-02-10 (-1d) |  | 96d → 97d |  | 16d → 17d |
| 41 | Ввод справочников | 2011-02-11 → 2011-02-10 (-1d) | 2011-04-07 → 2011-04-06 (-1d) |  |  | 16d → 17d |
| 44 | **Обучение персонала** | 2011-02-10 → 2011-02-09 (-1d) |  | 126d → 127d |  |  |
| 45 | Принципы работы системы | 2011-02-10 → 2011-02-09 (-1d) | 2011-02-15 → 2011-02-14 (-1d) |  |  | 68d → 69d |
| 46 | Изучение интерфейса | 2011-02-15 → 2011-02-14 (-1d) | 2011-02-22 → 2011-02-21 (-1d) |  |  | 68d → 69d |
| 47 | Изучение справочников | 2011-02-22 → 2011-02-21 (-1d) | 2011-03-22 → 2011-03-21 (-1d) |  |  | 68d → 69d |

## Version 10 (saved 2022-10-21, file Бух6_Ресурсы.mpp)

Note of the change: Лабораторные работы 6-7

Last finish stays 2011-08-17.

Changed:

| ID | Task | Start | Finish | Duration | Total float |
| --- | --- | --- | --- | --- | --- |
| 17 | **Приобретение компьютеров и сетевого оборудования** | 2010-10-25 → 2010-11-03 (+9d) | 2010-12-08 → 2010-12-09 (+1d) | 33d → 27d | 17d → 16d |
| 18 | Сбор информации о поставщиках и предложениях | 2010-10-25 → 2010-11-03 (+9d) | 2010-11-10 → 2010-11-11 (+1d) | 7d → 4d | 17d → 16d |
| 19 | Анализ и выбор поставщика | 2010-11-11 → 2010-11-12 (+1d) | 2010-11-17 → 2010-11-18 (+1d) |  | 17d → 16d |
| 20 | Заключение договоров | 2010-11-18 → 2010-11-19 (+1d) | 2010-11-24 → 2010-11-25 (+1d) |  | 17d → 16d |
| 21 | Оплата за оборудование | 2010-11-25 → 2010-11-26 (+1d) | 2010-11-26 → 2010-11-29 (+3d) |  | 17d → 16d |
| 22 | Оформление оборудования на баланс | 2010-12-06 → 2010-12-07 (+1d) | 2010-12-08 → 2010-12-09 (+1d) |  | 17d → 16d |
| 23 | Приобретение оборудования завершено | 2010-12-08 → 2010-12-09 (+1d) | 2010-12-08 → 2010-12-09 (+1d) |  | 17d → 16d |
| 24 | **Обучение администратора и программиста** | 2010-11-16 → 2010-11-10 (-6d) | 2010-12-23 → 2011-04-13 (+111d) | 28d → 111d | 169d → 90d |
| 25 | Курсы администраторов | 2010-11-25 → 2010-11-10 (-15d) | 2010-12-20 → 2011-04-08 (+109d) |  | 169d → 90d |
| 27 | Сдача сертификационных экзаменов | 2010-12-21 → 2011-04-11 (+111d) | 2010-12-23 → 2011-04-13 (+111d) |  | 169d → 90d |
| 28 | Обучение завершено | 2010-12-23 → 2011-04-13 (+111d) | 2010-12-23 → 2011-04-13 (+111d) |  | 169d → 90d |
| 29 | **Монтаж локальной сети** | 2010-12-09 → 2010-12-10 (+1d) | 2011-01-17 → 2011-01-18 (+1d) |  | 17d → 16d |
| 30 | Установка компьютеров на рабочих местах | 2011-01-06 → 2011-01-07 (+1d) | 2011-01-10 → 2011-01-11 (+1d) |  | 17d → 16d |
| 31 | Монтаж кабеля | 2010-12-09 → 2010-12-10 (+1d) | 2010-12-22 → 2010-12-23 (+1d) |  | 30d → 29d |
| 32 | Монтаж сетевых устройств | 2010-12-23 → 2010-12-24 (+1d) | 2011-01-05 → 2011-01-06 (+1d) |  | 20d → 19d |
| 33 | Подключение кабеля к компьютерам и сетевым устройствам | 2011-01-11 → 2011-01-12 (+1d) | 2011-01-17 → 2011-01-18 (+1d) |  | 17d → 16d |
| 34 | Монтаж завершен | 2011-01-17 → 2011-01-18 (+1d) | 2011-01-17 → 2011-01-18 (+1d) |  | 17d → 16d |
| 35 | **Установка ПО на компьютеры** | 2011-01-18 → 2011-01-19 (+1d) | 2011-02-09 → 2011-02-10 (+1d) |  | 17d → 16d |
| 36 | Установка сервера | 2011-01-18 → 2011-01-19 (+1d) | 2011-01-24 → 2011-01-25 (+1d) |  | 17d → 16d |
| 37 | Создание доменов и пользователей | 2011-01-25 → 2011-01-26 (+1d) | 2011-02-02 → 2011-02-03 (+1d) |  | 17d → 16d |
| 38 | Проверка и настройка работы сети | 2011-02-03 → 2011-02-04 (+1d) | 2011-02-09 → 2011-02-10 (+1d) |  | 17d → 16d |
| 39 | Настройка сети завершена | 2011-02-09 → 2011-02-10 (+1d) | 2011-02-09 → 2011-02-10 (+1d) |  | 17d → 16d |
| 40 | **Ввод начальных данных** | 2011-02-10 → 2011-02-11 (+1d) |  | 97d → 96d | 17d → 16d |
| 41 | Ввод справочников | 2011-02-10 → 2011-02-11 (+1d) | 2011-04-06 → 2011-04-07 (+1d) |  | 17d → 16d |
| 44 | **Обучение персонала** | 2011-02-09 → 2011-02-10 (+1d) |  | 127d → 126d |  |
| 45 | Принципы работы системы | 2011-02-09 → 2011-02-10 (+1d) | 2011-02-14 → 2011-02-15 (+1d) |  | 69d → 68d |
| 46 | Изучение интерфейса | 2011-02-14 → 2011-02-15 (+1d) | 2011-02-21 → 2011-02-22 (+1d) |  | 69d → 68d |
| 47 | Изучение справочников | 2011-02-21 → 2011-02-22 (+1d) | 2011-03-21 → 2011-03-22 (+1d) |  | 69d → 68d |

## Version 11 (data date 2011-08-17, saved 2022-10-21, file Отчет задачи с задержкой.mpp)

Note of the change: Лабораторные работы 6-7

Last finish stays 2011-08-17. Complete tasks 0 → 32.

Changed:

| ID | Task | Start | Finish | Duration | Complete | Total float | Other |
| --- | --- | --- | --- | --- | --- | --- | --- |
| 1 | Начало проекта | 2010-10-01 A | 2010-10-01 A |  | 0% → 100% | 16d → none | baseline start none → 2010-10-01; baseline finish none → 2010-10-01 |
| 2 | **Выбор системы** | 2010-10-01 A |  |  | 0% → 99% | 16d → 213d | baseline start none → 2010-10-01; baseline finish none → 2010-10-22 |
| 3 | Изучение рынка бухгалтерских систем | 2010-10-01 A |  |  | 0% → 99% | 16d → 7d | baseline start none → 2010-10-01; baseline finish none → 2010-10-11 |
| 4 | Составление требований к бухгалтерским системам | 2010-10-01 A |  |  | 0% → 99% | 16d → 7d | baseline start none → 2010-10-01; baseline finish none → 2010-10-11 |
| 5 | Консультации с фирмами-разработчиками | 2010-10-12 A |  |  | 0% → 99% | 16d → 215d | baseline start none → 2010-10-12; baseline finish none → 2010-10-20 |
| 6 | Принятие окончательного решения | 2010-10-21 A | 2010-10-22 A |  | 0% → 100% | 16d → none | baseline start none → 2010-10-21; baseline finish none → 2010-10-22 |
| 7 | Выбор завершен | 2010-10-22 A | 2010-10-22 A |  | 0% → 100% | 16d → none | baseline start none → 2010-10-22; baseline finish none → 2010-10-22 |
| 8 | **Приобретение программного обеспечения** | 2010-10-22 A |  |  | 0% → 99% | 176d → 197d | baseline start none → 2010-10-22; baseline finish none → 2010-11-15 |
| 9 | Заключение договоров | 2010-10-22 A |  |  | 0% → 99% | 176d → 207d | baseline start none → 2010-10-22; baseline finish none → 2010-11-01 |
| 10 | Оплата за ПО | 2010-11-02 A | 2010-11-03 A |  | 0% → 100% | 176d → none | baseline start none → 2010-11-02; baseline finish none → 2010-11-03 |
| 11 | Оформление ПО на баланс | 2010-11-11 A | 2010-11-15 A |  | 0% → 100% | 176d → none | baseline start none → 2010-11-11; baseline finish none → 2010-11-15 |
| 12 | Приобретение ПО завершено | 2010-11-15 A | 2010-11-15 A |  | 0% → 100% | 176d → none | baseline start none → 2010-11-15; baseline finish none → 2010-11-15 |
| 13 | **Составление проекта сети** | 2010-10-25 A |  |  | 0% → 99% | 23d → 201d | baseline start none → 2010-10-25; baseline finish none → 2010-11-09 |
| 14 | Разработка архитектуры сети | 2010-10-25 A | 2010-11-02 A |  | 0% → 100% | 23d → none | baseline start none → 2010-10-25; baseline finish none → 2010-11-02 |
| 15 | Проработка физического размещения сети | 2010-11-02 A |  |  | 0% → 99% | 90d → 201d | baseline start none → 2010-11-02; baseline finish none → 2010-11-09 |
| 16 | Проект сети завершен | 2010-11-09 A | 2010-11-09 A |  | 0% → 100% | 90d → none | baseline start none → 2010-11-09; baseline finish none → 2010-11-09 |
| 17 | **Приобретение компьютеров и сетевого оборудования** | 2010-11-03 A |  |  | 0% → 99% | 16d → 179d | baseline start none → 2010-11-03; baseline finish none → 2010-12-09 |
| 18 | Сбор информации о поставщиках и предложениях | 2010-11-03 A |  | 4d → 7d | 0% → 99% | 16d → 0d | baseline start none → 2010-11-03; baseline finish none → 2010-11-11 |
| 19 | Анализ и выбор поставщика | 2010-11-12 A |  |  | 0% → 99% | 16d → 194d | baseline start none → 2010-11-12; baseline finish none → 2010-11-18 |
| 20 | Заключение договоров | 2010-11-19 A | 2010-11-25 A |  | 0% → 100% | 16d → none | baseline start none → 2010-11-19; baseline finish none → 2010-11-25 |
| 21 | Оплата за оборудование | 2010-11-26 A | 2010-11-29 A |  | 0% → 100% | 16d → none | baseline start none → 2010-11-26; baseline finish none → 2010-11-29 |
| 22 | Оформление оборудования на баланс | 2010-12-07 A | 2010-12-09 A |  | 0% → 100% | 16d → none | baseline start none → 2010-12-07; baseline finish none → 2010-12-09 |
| 23 | Приобретение оборудования завершено | 2010-12-09 A | 2010-12-09 A |  | 0% → 100% | 16d → none | baseline start none → 2010-12-09; baseline finish none → 2010-12-09 |
| 24 | **Обучение администратора и программиста** | 2010-11-10 → 2010-11-16 A (+6d) | 2011-04-13 → 2010-12-24 (-110d) | 111d → 29d | 0% → 99% | 90d → 168d | baseline start none → 2010-11-16; baseline finish none → 2010-12-24 |
| 25 | Курсы администраторов | 2010-11-10 → 2010-11-26 A (+16d) | 2011-04-08 → 2010-12-21 (-108d) |  | 0% → 99% | 90d → 171d | baseline start none → 2010-11-26; baseline finish none → 2010-12-21 |
| 26 | Курсы программистов | 2010-11-16 A |  |  | 0% → 99% | 176d → 179d | baseline start none → 2010-11-16; baseline finish none → 2010-12-09 |
| 27 | Сдача сертификационных экзаменов | 2011-04-11 → 2010-12-22 A (-110d) | 2011-04-13 → 2010-12-24 A (-110d) |  | 0% → 100% | 90d → none | baseline start none → 2010-12-22; baseline finish none → 2010-12-24 |
| 28 | Обучение завершено | 2011-04-13 → 2010-12-24 A (-110d) | 2011-04-13 → 2010-12-24 A (-110d) |  | 0% → 100% | 90d → none | baseline start none → 2010-12-24; baseline finish none → 2010-12-24 |
| 29 | **Монтаж локальной сети** | 2010-12-10 A | 2011-01-18 A |  | 0% → 100% | 16d → none | baseline start none → 2010-12-10; baseline finish none → 2011-01-18 |
| 30 | Установка компьютеров на рабочих местах | 2011-01-07 A | 2011-01-11 A |  | 0% → 100% | 16d → none | baseline start none → 2011-01-07; baseline finish none → 2011-01-11 |
| 31 | Монтаж кабеля | 2010-12-10 A | 2010-12-23 A |  | 0% → 100% | 29d → none | baseline start none → 2010-12-10; baseline finish none → 2010-12-23 |
| 32 | Монтаж сетевых устройств | 2010-12-24 A | 2011-01-06 A |  | 0% → 100% | 19d → none | baseline start none → 2010-12-24; baseline finish none → 2011-01-06 |
| 33 | Подключение кабеля к компьютерам и сетевым устройствам | 2011-01-12 A | 2011-01-18 A |  | 0% → 100% | 16d → none | baseline start none → 2011-01-12; baseline finish none → 2011-01-18 |
| 34 | Монтаж завершен | 2011-01-18 A | 2011-01-18 A |  | 0% → 100% | 16d → none | baseline start none → 2011-01-18; baseline finish none → 2011-01-18 |
| 35 | **Установка ПО на компьютеры** | 2011-01-19 A | 2011-02-10 A |  | 0% → 100% | 16d → none | baseline start none → 2011-01-19; baseline finish none → 2011-02-10 |
| 36 | Установка сервера | 2011-01-19 A | 2011-01-25 A |  | 0% → 100% | 16d → none | baseline start none → 2011-01-19; baseline finish none → 2011-01-25 |
| 37 | Создание доменов и пользователей | 2011-01-26 A | 2011-02-03 A |  | 0% → 100% | 16d → none | baseline start none → 2011-01-26; baseline finish none → 2011-02-03 |
| 38 | Проверка и настройка работы сети | 2011-02-04 A | 2011-02-10 A |  | 0% → 100% | 16d → none | baseline start none → 2011-02-04; baseline finish none → 2011-02-10 |
| 39 | Настройка сети завершена | 2011-02-10 A | 2011-02-10 A |  | 0% → 100% | 16d → none | baseline start none → 2011-02-10; baseline finish none → 2011-02-10 |
| 40 | **Ввод начальных данных** | 2011-02-11 A | 2011-06-24 A |  | 0% → 100% | 16d → none | baseline start none → 2011-02-11; baseline finish none → 2011-06-24 |
| 41 | Ввод справочников | 2011-02-11 A | 2011-04-07 A |  | 0% → 100% | 16d → none | baseline start none → 2011-02-11; baseline finish none → 2011-04-07 |
| 42 | Ввод начальных остатков | 2011-05-02 A | 2011-06-24 A |  | 0% → 100% | 0d → none | baseline start none → 2011-05-02; baseline finish none → 2011-06-24 |
| 43 | Ввод начальных данных завершен | 2011-06-24 A | 2011-06-24 A |  | 0% → 100% | 38d → none | baseline start none → 2011-06-24; baseline finish none → 2011-06-24 |
| 44 | **Обучение персонала** | 2011-02-10 A |  |  | 0% → 99% | 0d → 8d | baseline start none → 2011-02-10; baseline finish none → 2011-08-05 |
| 45 | Принципы работы системы | 2011-02-10 A |  |  | 0% → 99% | 68d → 5d | baseline start none → 2011-02-10; baseline finish none → 2011-02-15 |
| 46 | Изучение интерфейса | 2011-02-15 A |  |  | 0% → 99% | 68d → 20d | baseline start none → 2011-02-15; baseline finish none → 2011-02-22 |
| 47 | Изучение справочников | 2011-02-22 A |  |  | 0% → 99% | 68d → 106d | baseline start none → 2011-02-22; baseline finish none → 2011-03-22 |
| 48 | Изучение документов и журналов | 2011-06-27 A | 2011-08-05 A |  | 0% → 100% | 0d → none | baseline start none → 2011-06-27; baseline finish none → 2011-08-05 |
| 49 | Обучение завершено | 2011-08-05 A | 2011-08-05 A |  | 0% → 100% | 0d → none | baseline start none → 2011-08-05; baseline finish none → 2011-08-05 |
| 50 | **Передача в эксплуатацию** | 2011-08-08 A | 2011-08-17 A |  | 0% → 100% | 0d → none | baseline start none → 2011-08-08; baseline finish none → 2011-08-17 |
| 51 | Формирование тестовой отчетности | 2011-08-08 A | 2011-08-12 A |  | 0% → 100% | 0d → none | baseline start none → 2011-08-08; baseline finish none → 2011-08-12 |
| 52 | Акт ввода в эксплуатацию | 2011-08-15 A | 2011-08-17 A |  | 0% → 100% | 0d → none | baseline start none → 2011-08-15; baseline finish none → 2011-08-17 |
| 53 | Передача в эксплуатацию завершена | 2011-08-17 A | 2011-08-17 A |  | 0% → 100% | 0d → none | baseline start none → 2011-08-17; baseline finish none → 2011-08-17 |
| 54 | Конец проекта | 2011-08-17 A | 2011-08-17 A |  | 0% → 100% | 0d → none | baseline start none → 2011-08-17; baseline finish none → 2011-08-17 |
